# GanttChart

How a schedule from MS Project changed from version to version. A marks actual dates.

## Version 1 (saved 2013-11-23)

Note of the change: updated approach and added separate file appendices

| ID | WBS | Task | Duration | Start | Finish | Predecessors | Complete | Total float | Constraint |
| --- | --- | --- | --- | --- | --- | --- | --- | --- | --- |
| 1 | 1 | **Panda Code Reviews** | 92d | 2013-08-07 A | 2013-12-09 |  | 96% | 0d |  |
| 2 | 1.1 | **System Specification** | 5d | 2013-08-07 A | 2013-08-13 A |  | 100% |  |  |
| 3 |  | Definition of Needs | 1d | 2013-08-07 A | 2013-08-07 A |  | 100% |  |  |
| 4 |  | Concept Development | 1d | 2013-08-08 A | 2013-08-08 A | 3 | 100% |  |  |
| 5 |  | Analysis of Alternatives | 1d | 2013-08-09 A | 2013-08-09 A | 4 | 100% |  |  |
| 6 |  | System requirements Assessment | 1d | 2013-08-12 A | 2013-08-12 A | 5 | 100% |  |  |
| 7 |  | Specs Document Elaboration | 1d | 2013-08-13 A | 2013-08-13 A | 6 | 100% |  |  |
| 8 | 1.2 | **Proposal Development** | 13d | 2013-08-13 A | 2013-08-30 A | 2 | 100% |  |  |
| 9 |  | Objectives | 0d | 2013-08-13 A | 2013-08-13 A | 7 | 100% |  |  |
| 10 |  | Problem Statement | 1d | 2013-08-14 A | 2013-08-14 A | 9 | 100% |  |  |
| 11 |  | Project Antecedents | 1d | 2013-08-14 A | 2013-08-14 A | 9 | 100% |  |  |
| 12 |  | General Approach | 1d | 2013-08-15 A | 2013-08-15 A | 11 | 100% |  |  |
| 13 |  | Personnel Workload Distribution | 1d | 2013-08-16 A | 2013-08-16 A | 12 | 100% |  |  |
| 14 |  | Budget | 1d | 2013-08-15 A | 2013-08-15 A | 10 | 100% |  |  |
| 15 |  | Assessment Methods | 1d | 2013-08-20 A | 2013-08-20 A | 13 | 100% |  |  |
| 16 |  | Impact | 1d | 2013-08-14 A | 2013-08-14 A | 9 | 100% |  |  |
| 17 |  | Market Overview | 1d | 2013-08-15 A | 2013-08-15 A | 11 | 100% |  |  |
| 18 |  | Risk Management | 1d | 2013-08-16 A | 2013-08-16 A | 17 | 100% |  |  |
| 19 |  | Executive Summary | 1d | 2013-08-21 A | 2013-08-21 A | 9, 10, 11, 12, 13, 14, 15, 16, 17, 18 | 100% |  |  |
| 20 |  | First Draft Review | 1d | 2013-08-30 A | 2013-08-30 A | 19 | 100% |  |  |
| 21 |  | Final Proposal Review and Acceptance | 10d | 2013-09-02 A | 2013-09-13 A | 20 | 100% |  | finish no earlier than 2013-09-13 |
| 22 |  | Proposal Presentation | 1d | 2013-09-09 A | 2013-09-09 A | 21 | 100% |  |  |
| 23 | 1.5 | **System Design** | 14d | 2013-09-11 A | 2013-09-30 A | 22 | 100% |  |  |
| 24 | 1.5.1 | **Software Design** | 14d | 2013-09-11 A | 2013-09-30 A | 22 | 100% |  |  |
| 25 |  | Use Case Diagrams | 2d | 2013-09-11 A | 2013-09-12 A | 22 | 100% |  |  |
| 26 |  | Use Case Descriptions | 2d | 2013-09-13 A | 2013-09-16 A | 25 | 100% |  |  |
| 27 |  | Sequential Diagrams | 2d | 2013-09-17 A | 2013-09-18 A | 26 | 100% |  |  |
| 28 |  | Class Diagrams | 1d | 2013-09-17 A | 2013-09-17 A | 27 | 100% |  |  |
| 29 |  | Flow Charts | 1d | 2013-09-20 A | 2013-09-20 A | 28 | 100% |  |  |
| 30 | 1.5.1.6 | **Front End** | 6d | 2013-09-23 A | 2013-09-30 A | 28, 25, 26, 27, 29 | 100% |  |  |
| 31 |  | Student Views | 3d | 2013-09-23 A | 2013-09-25 A | 28, 25, 26, 27, 29 | 100% |  |  |
| 32 |  | Professor Views | 3d | 2013-09-26 A | 2013-09-30 A | 31 | 100% |  |  |
| 33 | 1.5.1.7 | **Back End** | 4d | 2013-09-24 A | 2013-09-27 A | 28, 25, 26, 27, 29 | 100% |  |  |
| 34 |  | Sandboxed Prototype | 2d | 2013-09-24 A | 2013-09-26 A | 28, 25, 26, 27, 29 | 100% |  |  |
| 35 |  | REST API documentation | 1d | 2013-09-25 A | 2013-09-25 A | 34 | 100% |  |  |
| 36 |  | Queries Structure | 1d | 2013-09-27 A | 2013-09-27 A | 35 | 100% |  |  |
| 37 | 1.5.1.8 | **Account and Repositories Manager** | 2d | 2013-09-24 A | 2013-09-25 A | 28, 25, 26, 27, 29 | 100% |  |  |
| 38 |  | Repositories Management | 2d | 2013-09-24 A | 2013-09-25 A | 28, 25, 26, 27, 29 | 100% |  |  |
| 39 | 1.6 | **Implementation** | 27d | 2013-10-01 A | 2013-11-05 A | 23 | 100% |  |  |
| 40 | 1.6.1 | **Front End** | 25d | 2013-10-01 A | 2013-11-01 A | 30 | 100% |  |  |
| 41 |  | Student Views | 13d | 2013-10-01 A | 2013-10-17 A | 30 | 100% |  |  |
| 42 |  | Professor Views | 7d | 2013-10-18 A | 2013-10-26 A | 41 | 100% |  |  |
| 43 |  | Administrator Views | 5d | 2013-10-28 A | 2013-11-01 A | 42 | 100% |  |  |
| 44 | 1.6.2 | **Back End** | 21.4d | 2013-10-01 A | 2013-10-29 A | 33 | 100% |  |  |
| 45 |  | Data Base | 6d | 2013-10-01 A | 2013-10-08 A | 33 | 100% |  |  |
| 46 |  | Back End Server | 4d | 2013-10-09 A | 2013-10-15 A | 45 | 100% |  |  |
| 47 |  | Testing Framework | 5d | 2013-10-16 A | 2013-10-23 A | 46 | 100% |  |  |
| 48 |  | REST API | 4d | 2013-10-23 A | 2013-10-29 A | 47 | 100% |  |  |
| 49 | 1.6.3 | **Accounts and Repositories Manager** | 14d | 2013-10-01 A | 2013-10-18 A | 23 | 100% |  |  |
| 50 |  | Repository Manager | 7d | 2013-10-01 A | 2013-10-09 A | 37 | 100% |  |  |
| 51 |  | Accounts and Repositories Controllers | 7d | 2013-10-10 A | 2013-10-18 A | 50 | 100% |  |  |
| 52 |  | Email Exchange System | 2d | 2013-10-21 A | 2013-10-22 A | 51, 50 | 100% |  |  |
| 53 | 1.6.5 | **Unit Testing** | 8.6d | 2013-10-25 A | 2013-11-05 A | 44 | 100% |  |  |
| 54 |  | Front End Testing | 2d | 2013-11-04 A | 2013-11-05 A | 40 | 100% |  |  |
| 55 |  | Back End Testing | 5d | 2013-10-30 A | 2013-11-05 A | 45, 46, 47, 48 | 100% |  |  |
| 56 |  | Account and Repositories Testing | 5d | 2013-10-25 A | 2013-11-01 A | 49 | 100% |  |  |
| 57 |  | Email Testing | 1d | 2013-11-01 A | 2013-11-04 A | 52 | 100% |  |  |
| 58 | 1.7 | **System Integration** | 11d | 2013-11-05 A | 2013-11-20 A | 53 | 100% |  |  |
| 59 |  | Integration of Front End with Back End | 5d | 2013-11-06 A | 2013-11-12 A | 54, 55 | 100% |  |  |
| 60 |  | Integration of Back End with Account and Repositories Manager | 3d | 2013-11-05 A | 2013-11-13 A | 55, 56 | 100% |  |  |
| 61 |  | Full Integration | 7d | 2013-11-11 A | 2013-11-19 A | 59, 60 | 100% |  |  |
| 62 |  | Integration Testing | 2d | 2013-11-19 A | 2013-11-20 A | 61 | 100% |  |  |
| 63 | 1.8 | **Delivery** | 13d | 2013-11-25 A | 2013-12-09 | 58 | 14% | 0d |  |
| 64 |  | Final Deployment | 1d | 2013-11-25 A | 2013-11-25 A | 62 | 100% |  |  |
| 65 |  | System Demo | 1d | 2013-12-02 | 2013-12-02 | 64 |  | 0d | start no earlier than 2013-12-02 |
| 66 |  | Final Report | 5d | 2013-12-05 | 2013-12-09 | 65 |  | 0d | finish no earlier than 2013-12-09 |

## Version 2 (saved 2013-12-09)

Note of the change: finished...

Last finish stays 2013-12-09. Complete tasks 49 → 51.

Changed:

| ID | Task | Start | Finish | Complete | Total float |
| --- | --- | --- | --- | --- | --- |
| 1 | **Panda Code Reviews** |  | 2013-12-09 A | 96% → 100% | 0d → none |
| 63 | **Delivery** |  | 2013-12-09 A | 14% → 100% | 0d → none |
| 65 | System Demo | 2013-12-02 A | 2013-12-02 A | 0% → 100% | 0d → none |
| 66 | Final Report | 2013-12-05 A | 2013-12-09 A | 0% → 100% | 0d → none |
