# GanttChart

How a schedule from MS Project changed from version to version. A marks actual dates.

## Version 1 (saved 2013-10-21, file Team_AguacateGantt21oct.mpp)

Note of the change: gantt chart hasta 21/oct

| ID | WBS | Task | Duration | Start | Finish | Predecessors | Complete | Total float | Constraint |
| --- | --- | --- | --- | --- | --- | --- | --- | --- | --- |
| 1 | 1 | **Panda Code Reviews** | 92d | 2013-08-07 A | 2013-12-09 |  | 40% | 0d |  |
| 2 | 1.1 | **System Specification** | 5d | 2013-08-07 A | 2013-08-13 A |  | 100% |  |  |
| 3 |  | Definition of Needs | 1d | 2013-08-07 A | 2013-08-07 A |  | 100% |  |  |
| 4 |  | Concept Development | 1d | 2013-08-08 A | 2013-08-08 A | 3 | 100% |  |  |
| 5 |  | Analysis of Alternatives | 1d | 2013-08-09 A | 2013-08-09 A | 4 | 100% |  |  |
| 6 |  | System requirements Assessment | 1d | 2013-08-12 A | 2013-08-12 A | 5 | 100% |  |  |
| 7 |  | Specs Document Elaboration | 1d | 2013-08-13 A | 2013-08-13 A | 6 | 100% |  |  |
| 8 | 1.2 | **Proposal Development** | 13d | 2013-08-13 A | 2013-08-30 A | 2 | 100% |  |  |
| 9 |  | Objectives | 0d | 2013-08-13 A | 2013-08-13 A | 7 | 100% |  |  |
| 10 |  | Problem Statement | 1d | 2013-08-14 A | 2013-08-14 A | 9 | 100% |  |  |
| 11 |  | Project Antecedents | 1d | 2013-08-14 A | 2013-08-14 A | 9 | 100% |  |  |
| 12 |  | General Approach | 1d | 2013-08-15 A | 2013-08-15 A | 11 | 100% |  |  |
| 13 |  | Personnel Workload Distribution | 1d | 2013-08-16 A | 2013-08-16 A | 12 | 100% |  |  |
| 14 |  | Budget | 1d | 2013-08-15 A | 2013-08-15 A | 10 | 100% |  |  |
| 15 |  | Assessment Methods | 1d | 2013-08-20 A | 2013-08-20 A | 13 | 100% |  |  |
| 16 |  | Impact | 1d | 2013-08-14 A | 2013-08-14 A | 9 | 100% |  |  |
| 17 |  | Market Overview | 1d | 2013-08-15 A | 2013-08-15 A | 11 | 100% |  |  |
| 18 |  | Risk Management | 1d | 2013-08-16 A | 2013-08-16 A | 17 | 100% |  |  |
| 19 |  | Executive Summary | 1d | 2013-08-21 A | 2013-08-21 A | 9, 10, 11, 12, 13, 14, 15, 16, 17, 18 | 100% |  |  |
| 20 |  | First Draft Review | 1d | 2013-08-30 A | 2013-08-30 A | 19 | 100% |  |  |
| 21 |  | Final Proposal Review and Acceptance | 10d | 2013-09-02 A | 2013-09-13 A | 20 | 100% |  | finish no earlier than 2013-09-13 |
| 22 |  | Proposal Presentation | 1d | 2013-09-09 A | 2013-09-09 A | 21 | 100% |  |  |
| 23 | 1.5 | **System Design** | 14d | 2013-09-11 A | 2013-09-30 A | 22 | 100% |  |  |
| 24 | 1.5.1 | **Software Design** | 14d | 2013-09-11 A | 2013-09-30 A | 22 | 100% |  |  |
| 25 |  | Use Case Diagrams | 2d | 2013-09-11 A | 2013-09-12 A | 22 | 100% |  |  |
| 26 |  | Use Case Descriptions | 2d | 2013-09-13 A | 2013-09-16 A | 25 | 100% |  |  |
| 27 |  | Sequential Diagrams | 2d | 2013-09-17 A | 2013-09-18 A | 26 | 100% |  |  |
| 28 |  | Class Diagrams | 1d | 2013-09-17 A | 2013-09-17 A | 27 | 100% |  |  |
| 29 |  | Flow Charts | 1d | 2013-09-20 A | 2013-09-20 A | 28 | 100% |  |  |
| 30 | 1.5.1.6 | **Front End** | 6d | 2013-09-23 A | 2013-09-30 A | 28, 25, 26, 27, 29 | 100% |  |  |
| 31 |  | Student Views | 3d | 2013-09-23 A | 2013-09-25 A | 28, 25, 26, 27, 29 | 100% |  |  |
| 32 |  | Professor Views | 3d | 2013-09-26 A | 2013-09-30 A | 31 | 100% |  |  |
| 33 | 1.5.1.7 | **Back End** | 4d | 2013-09-24 A | 2013-09-27 A | 28, 25, 26, 27, 29 | 100% |  |  |
| 34 |  | Sandboxed Prototype | 2d | 2013-09-24 A | 2013-09-26 A | 28, 25, 26, 27, 29 | 100% |  |  |
| 35 |  | REST API documentation | 1d | 2013-09-25 A | 2013-09-25 A | 34 | 100% |  |  |
| 36 |  | Queries Structure | 1d | 2013-09-27 A | 2013-09-27 A | 35 | 100% |  |  |
| 37 | 1.5.1.8 | **Account and Repositories Manager** | 2d | 2013-09-24 A | 2013-09-25 A | 28, 25, 26, 27, 29 | 100% |  |  |
| 38 |  | Repositories Management | 2d | 2013-09-24 A | 2013-09-25 A | 28, 25, 26, 27, 29 | 100% |  |  |
| 39 | 1.6 | **Implementation** | 25d | 2013-10-01 A | 2013-11-01 | 23 | 15% | 0d |  |
| 40 | 1.6.1 | **Front End** | 25d | 2013-10-01 A | 2013-11-01 | 30 | 1% | 0d |  |
| 41 |  | Student Views | 13d | 2013-10-01 A | 2013-10-17 | 30 | 2% | 0.1d |  |
| 42 |  | Professor Views | 7d | 2013-10-18 A | 2013-10-26 | 41 | 1% | 0d |  |
| 43 |  | Administrator Views | 5d | 2013-10-28 | 2013-11-01 | 42 |  | 0d |  |
| 44 | 1.6.2 | **Back End** | 18.4d | 2013-10-01 A | 2013-10-25 | 33 | 31% | 0.6d |  |
| 45 |  | Data Base | 6d | 2013-10-01 A | 2013-10-08 | 33 | 4% | 1.6d |  |
| 46 |  | Back End Server | 4d | 2013-10-09 A | 2013-10-14 | 45 | 40% | 3.5d |  |
| 47 |  | Testing Framework | 5d | 2013-10-15 A | 2013-10-21 | 46 | 70% | 0d |  |
| 48 |  | REST API | 4d | 2013-10-18 A | 2013-10-25 | 47 | 15% | 0.6d |  |
| 49 | 1.6.3 | **Accounts and Repositories Manager** | 24.4d | 2013-10-01 A | 2013-11-01 | 23 | 16% | 0.6d |  |
| 50 |  | Repository Manager | 7d | 2013-10-01 A | 2013-10-09 | 37 | 57% | 6d |  |
| 51 |  | Accounts and Repositories Controllers | 7d | 2013-10-10 | 2013-10-18 | 50 |  | 6d |  |
| 52 |  | Email Exchange System | 2d | 2013-10-21 | 2013-10-22 | 51, 50 |  | 6d |  |
| 53 |  | Ads | 3d | 2013-10-23 | 2013-10-25 | 52 |  | 6d |  |
| 54 |  | Communication with Back End Server | 6d | 2013-10-25 | 2013-11-01 | 45, 46, 47, 48 |  | 0.6d |  |
| 55 | 1.7 | **Unit Testing** | 8.6d | 2013-10-25 | 2013-11-05 | 44 |  | 0d |  |
| 56 |  | Front End Testing | 2d | 2013-11-04 | 2013-11-05 | 40 |  | 0d |  |
| 57 |  | Back End Testing | 3d | 2013-10-25 | 2013-10-29 | 44 |  | 0.6d |  |
| 58 |  | Account and Repositories Testing | 2d | 2013-11-01 | 2013-11-05 | 49 |  | 0.6d |  |
| 59 | 1.8 | **System Integration** | 11d | 2013-11-06 | 2013-11-20 | 55 |  | 0d |  |
| 60 |  | Integration of Front End with Back End | 3d | 2013-11-06 | 2013-11-08 | 56, 57 |  | 0d |  |
| 61 |  | Integration of Back End with Account and Repositories Manager | 2d | 2013-11-08 | 2013-11-12 | 57, 58, 60 |  | 0d |  |
| 62 |  | Full Integration | 3d | 2013-11-13 | 2013-11-15 | 60, 61 |  | 0d |  |
| 63 |  | Integration Testing | 3d | 2013-11-15 | 2013-11-20 | 62 |  | 0d |  |
| 64 | 1.9 | **Delivery** | 15d | 2013-11-21 | 2013-12-09 | 59 |  | 0d |  |
| 65 |  | Final Deployment | 2d | 2013-11-21 | 2013-11-22 | 63 |  | 7d | finish no earlier than 2013-11-20 |
| 66 |  | System Demo | 1d | 2013-12-02 | 2013-12-02 | 65 |  | 2d | finish no earlier than 2013-12-02 |
| 67 |  | Final Report | 5d | 2013-12-05 | 2013-12-09 | 66 |  | 0d | finish no earlier than 2013-12-09 |

## Version 2 (saved 2013-10-30, file Team_AguacateGantt.mpp)

Note of the change: gantt chart modified

Last finish stays 2013-12-09. Complete tasks 30 → 39.

Removed: 53 Ads; 54 Communication with Back End Server

Changed:

| ID | Task | Start | Finish | Duration | Complete | Total float | Predecessors | Other |
| --- | --- | --- | --- | --- | --- | --- | --- | --- |
| 1 | **Panda Code Reviews** |  |  |  | 40% → 70% |  |  |  |
| 39 | **Implementation** |  | 2013-11-01 → 2013-11-05 (+4d) | 25d → 27d | 15% → 70% |  |  |  |
| 40 | **Front End** |  |  |  | 1% → 24% |  |  |  |
| 41 | Student Views |  |  |  | 2% → 40% | 0.1d → 0.8d |  |  |
| 42 | Professor Views |  |  |  | 1% → 10% |  |  | resources Samuel Rodríguez [50%] → Samuel Rodríguez [50%]; Nelián Colón |
| 44 | **Back End** |  | 2013-10-25 → 2013-10-29 A (+4d) | 18.4d → 21.4d | 31% → 100% | 0.6d → none |  |  |
| 45 | Data Base |  | 2013-10-08 A |  | 4% → 100% | 1.6d → none |  |  |
| 46 | Back End Server |  | 2013-10-14 → 2013-10-15 A (+1d) |  | 40% → 100% | 3.5d → none |  |  |
| 47 | Testing Framework | 2013-10-15 A → 2013-10-16 A (+1d) | 2013-10-21 → 2013-10-23 A (+2d) |  | 70% → 100% | 0d → none |  |  |
| 48 | REST API | 2013-10-18 A → 2013-10-23 A (+5d) | 2013-10-25 → 2013-10-29 A (+4d) |  | 15% → 100% | 0.6d → none |  |  |
| 49 | **Accounts and Repositories Manager** |  | 2013-11-01 → 2013-10-22 A (-10d) | 24.4d → 16d | 16% → 100% | 0.6d → none |  |  |
| 50 | Repository Manager |  | 2013-10-09 A |  | 57% → 100% | 6d → none |  | resources Nelián Colón [10%] → Nelián Colón [50%] |
| 51 | Accounts and Repositories Controllers | 2013-10-10 A | 2013-10-18 A |  | 0% → 100% | 6d → none |  | resources Nelián Colón [10%] → Nelián Colón [50%] |
| 52 | Email Exchange System | 2013-10-21 A | 2013-10-22 A |  | 0% → 100% | 6d → none |  |  |
| 53 | **Unit Testing** | 2013-10-25 A |  |  | 0% → 82% |  |  |  |
| 55 | Back End Testing | 2013-10-25 → 2013-10-30 A (+5d) | 2013-10-29 → 2013-11-05 A (+7d) | 3d → 5d | 0% → 100% | 0.6d → none | 44 → 45, 46, 47, 48 |  |
| 56 | Account and Repositories Testing | 2013-11-01 → 2013-10-25 A (-7d) | 2013-11-05 → 2013-10-31 A (-5d) | 2d → 4d | 0% → 100% | 0.6d → none |  |  |
| 57 | **System Integration** | 2013-11-06 → 2013-11-05 (-1d) | 2013-11-20 → 2013-11-19 (-1d) | 11d → 10d |  | 0d → 1d |  |  |
| 58 | Integration of Front End with Back End |  | 2013-11-08 → 2013-11-12 (+4d) | 3d → 5d |  | 0d → 1d |  |  |
| 59 | Integration of Back End with Account and Repositories Manager | 2013-11-08 → 2013-11-05 (-3d) | 2013-11-12 → 2013-11-07 (-5d) |  |  | 0d → 3d | 55, 56, 58 → 55, 56 |  |
| 61 | Integration Testing |  | 2013-11-20 → 2013-11-19 (-1d) | 3d → 2d |  | 0d → 1d |  |  |
| 62 | **Delivery** | 2013-11-21 → 2013-11-20 (-1d) |  | 15d → 16d |  |  |  |  |
| 63 | Final Deployment | 2013-11-21 → 2013-11-20 (-1d) | 2013-11-22 → 2013-11-21 (-1d) |  |  | 7d → 6d |  | constraint finish no earlier than 2013-11-20 → finish no later than 2013-12-01 |
| 64 | System Demo |  |  |  |  | 2d → 0d |  | constraint finish no earlier than 2013-12-02 → start no earlier than 2013-12-02 |

## Version 3 (saved 2013-11-03, file Team_AguacateGantt.mpp)

Note of the change: gantt chart updated

Last finish stays 2013-12-09. Complete tasks 39 → 41.

Added:

| ID | Task | Duration | Start | Finish | Predecessors | Resources |
| --- | --- | --- | --- | --- | --- | --- |
| 57 | Email Testing | 1d | 2013-11-01 A | 2013-11-04 A | 52 | Nelián Colón [50%] |

Changed:

| ID | Task | Start | Finish | Duration | Complete | Total float |
| --- | --- | --- | --- | --- | --- | --- |
| 1 | **Panda Code Reviews** |  |  |  | 70% → 76% |  |
| 39 | **Implementation** |  |  |  | 70% → 78% |  |
| 40 | **Front End** |  |  |  | 24% → 35% | 0d → 2d |
| 42 | Professor Views |  |  |  | 10% → 50% | 0d → 2d |
| 49 | **Accounts and Repositories Manager** |  | 2013-10-22 A → 2013-10-18 A (-4d) | 16d → 14d |  |  |
| 53 | **Unit Testing** |  | 2013-11-05 A |  | 82% → 100% | 0d → none |
| 54 | Front End Testing | 2013-11-04 A | 2013-11-05 A |  | 0% → 100% | 0d → none |
| 56 | Account and Repositories Testing |  | 2013-10-31 A → 2013-11-01 A (+1d) | 4d → 5d |  |  |
| 58 | **System Integration** | 2013-11-05 A |  |  | 0% → 21% |  |
| 59 | Integration of Front End with Back End | 2013-11-06 A | 2013-11-12 → 2013-11-08 (-4d) | 5d → 3d | 0% → 83% |  |
| 61 | Full Integration | 2013-11-13 → 2013-11-11 (-2d) |  | 3d → 5d |  |  |

## Version 4 (saved 2013-11-05, file Team_AguacateGantt.mpp)

Note of the change: changes to test procedure and gantt chart

Last finish stays 2013-12-09.

Changed:

| ID | Task | Complete | Total float |
| --- | --- | --- | --- |
| 1 | **Panda Code Reviews** | 76% → 82% |  |
| 39 | **Implementation** | 78% → 89% |  |
| 40 | **Front End** | 35% → 67% |  |
| 41 | Student Views | 40% → 80% | 0.7d → 6.3d |
| 42 | Professor Views | 50% → 90% |  |
| 58 | **System Integration** | 21% → 23% |  |
| 59 | Integration of Front End with Back End | 83% → 90% |  |

## Version 5 (saved 2013-11-06, file Team_AguacateGantt.mpp)

Note of the change: gantt arreglado antes del hh

Last finish stays 2013-12-09.

Changed:

| ID | Task | Complete |
| --- | --- | --- |
| 58 | **System Integration** | 23% → 21% |
| 59 | Integration of Front End with Back End | 90% → 85% |

## Version 6 (saved 2013-11-23, file Team_AguacateGantt.mpp)

Note of the change: gantt final

Last finish stays 2013-12-09. Complete tasks 41 → 49.

Changed:

| ID | Task | Start | Finish | Duration | Complete | Total float | Other |
| --- | --- | --- | --- | --- | --- | --- | --- |
| 1 | **Panda Code Reviews** |  |  |  | 82% → 96% |  |  |
| 39 | **Implementation** |  | 2013-11-05 A |  | 89% → 100% | 0d → none |  |
| 40 | **Front End** |  | 2013-11-01 A |  | 67% → 100% | 2d → none |  |
| 41 | Student Views |  | 2013-10-17 A |  | 80% → 100% | 6.3d → none |  |
| 42 | Professor Views |  | 2013-10-26 A |  | 90% → 100% | 2d → none |  |
| 43 | Administrator Views | 2013-10-28 A | 2013-11-01 A |  | 0% → 100% | 2d → none |  |
| 58 | **System Integration** |  | 2013-11-19 → 2013-11-20 A (+1d) | 10d → 11d | 21% → 100% | 1d → none |  |
| 59 | Integration of Front End with Back End |  | 2013-11-08 → 2013-11-12 A (+4d) | 3d → 5d | 85% → 100% | 1d → none |  |
| 60 | Integration of Back End with Account and Repositories Manager | 2013-11-05 A | 2013-11-07 → 2013-11-13 A (+6d) | 2d → 3d | 0% → 100% | 2d → none |  |
| 61 | Full Integration | 2013-11-11 A | 2013-11-15 → 2013-11-19 A (+4d) | 5d → 7d | 0% → 100% | 1d → none |  |
| 62 | Integration Testing | 2013-11-15 → 2013-11-19 A (+4d) | 2013-11-19 → 2013-11-20 A (+1d) |  | 0% → 100% | 1d → none |  |
| 63 | **Delivery** | 2013-11-20 → 2013-11-25 A (+5d) |  | 16d → 13d | 0% → 14% |  |  |
| 64 | Final Deployment | 2013-11-20 → 2013-11-25 A (+5d) | 2013-11-21 → 2013-11-25 A (+4d) | 2d → 1d | 0% → 100% | 6d → none | constraint finish no later than 2013-12-01 → none |
