# GanttChart

How a schedule from MS Project changed from version to version. A marks actual dates.

## Version 1 (saved 2013-09-27)

Note of the change: added some stuff, started changing gantt

| ID | WBS | Task | Duration | Start | Finish | Predecessors | Complete | Total float | Constraint |
| --- | --- | --- | --- | --- | --- | --- | --- | --- | --- |
| 1 | 1 | **Panda Code Reviews** | 92d | 2013-08-07 A | 2013-12-09 |  | 40% | 0d |  |
| 2 | 1.1 | **System Specification** | 5d | 2013-08-07 A | 2013-08-13 A |  | 100% |  |  |
| 3 |  | Definition of Needs | 1d | 2013-08-07 A | 2013-08-07 A |  | 100% |  |  |
| 4 |  | Concept Development | 1d | 2013-08-08 A | 2013-08-08 A | 3 | 100% |  |  |
| 5 |  | Analysis of Alternatives | 1d | 2013-08-09 A | 2013-08-09 A | 4 | 100% |  |  |
| 6 |  | System requirements Assessment | 1d | 2013-08-12 A | 2013-08-12 A | 5 | 100% |  |  |
| 7 |  | Specs Document Elaboration | 1d | 2013-08-13 A | 2013-08-13 A | 6 | 100% |  |  |
| 8 | 1.2 | **Proposal Development** | 13d | 2013-08-13 A | 2013-08-30 A |  | 100% |  |  |
| 9 |  | Objectives | 0d | 2013-08-13 A | 2013-08-13 A | 7 | 100% |  |  |
| 10 |  | Problem Statement | 1d | 2013-08-14 A | 2013-08-14 A | 9 | 100% |  |  |
| 11 |  | Project Antecedents | 1d | 2013-08-14 A | 2013-08-14 A | 9 | 100% |  |  |
| 12 |  | General Approach | 1d | 2013-08-15 A | 2013-08-15 A | 11 | 100% |  |  |
| 13 |  | Personnel Workload Distribution | 1d | 2013-08-16 A | 2013-08-16 A | 12 | 100% |  |  |
| 14 |  | Budget | 1d | 2013-08-15 A | 2013-08-15 A | 10 | 100% |  |  |
| 15 |  | Assessment Methods | 1d | 2013-08-20 A | 2013-08-20 A | 13 | 100% |  |  |
| 16 |  | Impact | 1d | 2013-08-14 A | 2013-08-14 A | 9 | 100% |  |  |
| 17 |  | Market Overview | 1d | 2013-08-15 A | 2013-08-15 A | 11 | 100% |  |  |
| 18 |  | Risk Management | 1d | 2013-08-16 A | 2013-08-16 A | 17 | 100% |  |  |
| 19 |  | Executive Summary | 1d | 2013-08-21 A | 2013-08-21 A | 9, 10, 11, 12, 13, 14, 15, 16, 17, 18 | 100% |  |  |
| 20 |  | First Draft Review | 1d | 2013-08-30 A | 2013-08-30 A | 19 | 100% |  |  |
| 21 |  | Final Proposal Review and Acceptance | 10d | 2013-09-02 A | 2013-09-13 A | 20 | 100% |  | finish no earlier than 2013-09-13 |
| 22 |  | Proposal Presentation | 2d | 2013-09-09 A | 2013-09-10 A | 21 | 100% |  |  |
| 23 | 1.5 | **System Design** | 10d | 2013-09-16 A | 2013-09-27 A | 8 | 100% |  |  |
| 24 | 1.5.1 | **Front End Mockups** | 10d | 2013-09-16 A | 2013-09-27 A | 21 | 100% |  |  |
| 25 |  | Account Manager | 2d | 2013-09-16 A | 2013-09-17 A | 21 | 100% |  |  |
| 26 |  | Repository Manager | 2d | 2013-09-19 A | 2013-09-20 A | 25 | 100% |  |  |
| 27 |  | Testing Manager | 2d | 2013-09-23 A | 2013-09-24 A | 26 | 100% |  |  |
| 28 |  | Source Code Viewer | 1d | 2013-09-25 A | 2013-09-25 A | 27 | 100% |  |  |
| 29 |  | Source Code Annotator | 1d | 2013-09-26 A | 2013-09-26 A | 28 | 100% |  |  |
| 30 |  | Grading | 1d | 2013-09-27 A | 2013-09-27 A | 29 | 100% |  |  |
| 31 | 1.5.2 | **Back End** | 10d | 2013-09-16 A | 2013-09-27 A | 21 | 100% |  |  |
| 32 |  | Flow Charts and Diagrams | 1d | 2013-09-16 A | 2013-09-16 A | 21 | 100% |  |  |
| 33 |  | Sandboxed Prototype | 2d | 2013-09-17 A | 2013-09-18 A | 32 | 100% |  |  |
| 34 |  | Middleware and Routes definitions | 2d | 2013-09-24 A | 2013-09-25 A | 33 | 100% |  |  |
| 35 |  | REST API documentation | 1d | 2013-09-26 A | 2013-09-26 A | 34 | 100% |  |  |
| 36 |  | Queries and Data Base Structure | 1d | 2013-09-27 A | 2013-09-27 A | 35 | 100% |  |  |
| 37 | 1.5.3 | **Account and Repositories Manager** | 9d | 2013-09-16 A | 2013-09-26 A | 21 | 100% |  |  |
| 38 |  | DB Queries Documentation | 3d | 2013-09-16 A | 2013-09-18 A | 21 | 100% |  |  |
| 39 |  | Gathering Information Documentation | 3d | 2013-09-19 A | 2013-09-23 A | 38 | 100% |  |  |
| 40 |  | Payment System (Ads) | 3d | 2013-09-24 A | 2013-09-26 A | 39 | 100% |  |  |
| 41 | 1.6 | **Implementation** | 21d | 2013-09-27 | 2013-10-25 |  |  | 0d |  |
| 42 | 1.6.1 | **Front End** | 20d | 2013-09-30 | 2013-10-25 | 24 |  | 0d |  |
| 43 |  | Account Manager | 4d | 2013-09-30 | 2013-10-03 | 24 |  | 0d |  |
| 44 |  | Repository Manager | 4d | 2013-10-04 | 2013-10-09 | 43 |  | 0d |  |
| 45 |  | Testing Manager | 4d | 2013-10-10 | 2013-10-15 | 44 |  | 0d |  |
| 46 |  | Source Code Viewer | 3d | 2013-10-16 | 2013-10-18 | 45 |  | 0d |  |
| 47 |  | Source Code Annotation | 3d | 2013-10-21 | 2013-10-23 | 46 |  | 0d |  |
| 48 |  | Grading | 2d | 2013-10-24 | 2013-10-25 | 47 |  | 0d |  |
| 49 | 1.6.2 | **Back End** | 17d | 2013-09-30 | 2013-10-22 | 31 |  | 1d |  |
| 50 |  | Data Base | 4d | 2013-09-30 | 2013-10-03 | 31 |  | 1d |  |
| 51 |  | Back End Server | 4d | 2013-10-04 | 2013-10-09 | 50 |  | 1d |  |
| 52 |  | Testing Framework | 4d | 2013-10-10 | 2013-10-15 | 51 |  | 1d |  |
| 53 |  | REST API | 3d | 2013-10-16 | 2013-10-18 | 52 |  | 1d |  |
| 54 |  | Account and Repositories Controller | 2d | 2013-10-21 | 2013-10-22 | 53 |  | 1d |  |
| 55 | 1.6.3 | **Accounts and Repositories Manager** | 20d | 2013-09-27 | 2013-10-24 | 37 |  | 1d |  |
| 56 |  | Accounts to Data Base Controllers | 5d | 2013-09-27 | 2013-10-03 | 37 |  | 4d |  |
| 57 |  | Repository Manager | 5d | 2013-10-04 | 2013-10-10 | 56 |  | 4d |  |
| 58 |  | Communication with Back End Server | 2d | 2013-10-23 | 2013-10-24 | 50, 51, 52, 53, 54 |  | 1d |  |
| 59 |  | Payment System (Ads) | 5d | 2013-10-11 | 2013-10-21 | 57 |  | 4d |  |
| 60 | 1.7 | **Unit Testing** | 6d | 2013-10-23 | 2013-10-29 |  |  | 3d |  |
| 61 |  | Front End Testing | 2d | 2013-10-26 | 2013-10-28 | 42 |  | 0d |  |
| 62 |  | Back End Testing | 2d | 2013-10-23 | 2013-10-24 | 49 |  | 3d |  |
| 63 |  | Account and Repositories Testing | 2d | 2013-10-28 | 2013-10-29 | 55 |  | 2d |  |
| 64 |  | Payment System Testing | 1d | 2013-10-25 | 2013-10-25 | 59 |  | 8d |  |
| 65 | 1.8 | **System Integration** | 12d | 2013-10-29 | 2013-11-13 |  |  | 0d |  |
| 66 |  | Integration of Front End with Back End | 3d | 2013-10-29 | 2013-10-31 | 61, 62 |  | 0d |  |
| 67 |  | Integration of Back End with Account and Repositories Manager | 3d | 2013-11-01 | 2013-11-05 | 62, 63, 66 |  | 0d |  |
| 68 |  | Integration of Ads System | 1d | 2013-11-06 | 2013-11-06 | 62, 64, 67 |  | 0d |  |
| 69 |  | Full Integration | 3d | 2013-11-07 | 2013-11-11 | 66, 67, 68 |  | 0d |  |
| 70 |  | Integration Testing | 2d | 2013-11-12 | 2013-11-13 | 69 |  | 0d |  |

| ID | WBS | Task | Duration | Start | Finish | Predecessors | Total float | Constraint |
| --- | --- | --- | --- | --- | --- | --- | --- | --- |
| 71 | 1.9 | **Delivery** | 20d | 2013-11-14 | 2013-12-09 |  | 0d |  |
| 72 |  | Deployment in Amazon Web Servers EC2 | 2d | 2013-11-14 | 2013-11-15 | 70 | 0d | finish no later than 2013-11-15 |
| 73 |  | System Demo | 1d | 2013-12-02 | 2013-12-02 | 72 | 2d | finish no earlier than 2013-12-02 |
| 74 |  | Final Report | 5d | 2013-12-05 | 2013-12-09 | 73 | 0d | finish no earlier than 2013-12-09 |

## Version 2 (saved 2013-09-27)

Note of the change: Merge branch 'master' of github.com:nelii28o2/Capstone

Last finish stays 2013-12-09.

Changed:

| ID | Task | Start | Complete | Total float |
| --- | --- | --- | --- | --- |
| 1 | **Panda Code Reviews** |  | 40% → 42% |  |
| 41 | **Implementation** | 2013-09-27 A | 0% → 6% |  |
| 42 | **Front End** | 2013-09-30 A | 0% → 10% |  |
| 43 | Account Manager | 2013-09-30 A | 0% → 10% | 0d → 0.4d |
| 44 | Repository Manager | 2013-10-04 A | 0% → 10% | 0d → 0.4d |
| 45 | Testing Manager | 2013-10-10 A | 0% → 10% | 0d → 0.3d |
| 46 | Source Code Viewer | 2013-10-16 A | 0% → 10% | 0d → 0.3d |
| 47 | Source Code Annotation | 2013-10-21 A | 0% → 10% | 0d → 0.2d |
| 48 | Grading | 2013-10-24 A | 0% → 10% |  |
| 49 | **Back End** | 2013-09-30 A | 0% → 9% |  |
| 50 | Data Base | 2013-09-30 A | 0% → 10% | 1d → 0.4d |
| 51 | Back End Server | 2013-10-04 A | 0% → 10% | 1d → 0.4d |
| 52 | Testing Framework | 2013-10-10 A | 0% → 10% | 1d → 0.3d |
| 53 | REST API | 2013-10-16 A | 0% → 10% |  |

## Version 3 (saved 2013-09-28)

Note of the change: added skeleton for budget analysis

Last finish stays 2013-12-09. Complete tasks 33 → 30.

Added:

| ID | Task | Duration | Start | Finish | Predecessors | Resources |
| --- | --- | --- | --- | --- | --- | --- |
| 24 | **Software Design** | 11d | 2013-09-11 | 2013-09-25 | 22 |  |
| 25 | Use Case Diagrams | 1d | 2013-09-11 | 2013-09-11 | 22 | Nelián Colón [50%] |
| 26 | Use Case Descriptions | 2d | 2013-09-12 | 2013-09-13 | 25 | Nelián Colón [50%]; Daniel Santiago [50%]; Samuel Rodríguez [50%] |
| 27 | Sequential Diagram | 1d | 2013-09-18 | 2013-09-18 | 26 | Nelián Colón [50%] |
| 28 | Flow Charts | 2d | 2013-09-20 | 2013-09-23 | 27 | Daniel Santiago [50%]; Samuel Rodríguez [50%] |
| 29 | Class Diagrams | 2d | 2013-09-24 | 2013-09-25 | 28 | Daniel Santiago [50%] |

Removed: 32 Flow Charts and Diagrams; 34 Middleware and Routes definitions; 54 Account and Repositories Controller

Changed:

| ID | Task | Start | Finish | Duration | Complete | Total float | Predecessors | Other |
| --- | --- | --- | --- | --- | --- | --- | --- | --- |
| 1 | **Panda Code Reviews** |  |  |  | 42% → 36% |  |  |  |
| 23 | **System Design** | 2013-09-16 A → 2013-09-11 A (-5d) | 2013-09-27 A → 2013-09-27 | 10d → 13d | 100% → 64% | none → 0d | 8 → 22 |  |
| 30 | **Front End Mockups** |  |  |  |  |  | 21 → 24 |  |
| 31 | Account Manager |  | 2013-09-17 A → 2013-09-16 A (-1d) | 2d → 1d |  |  | 21 → 29 |  |
| 32 | Repository Manager |  | 2013-09-20 A → 2013-09-19 A (-1d) | 2d → 1d |  |  |  |  |
| 33 | Testing Manager |  | 2013-09-24 A → 2013-09-23 A (-1d) | 2d → 1d |  |  |  |  |
| 37 | **Back End** | 2013-09-16 A → 2013-09-17 A (+1d) | 2013-09-27 A → 2013-09-27 | 10d → 9d | 100% → 67% | none → 0d | 21 → 24 |  |
| 38 | Sandboxed Prototype |  | 2013-09-18 A → 2013-09-17 A (-1d) | 2d → 1d |  |  | Flow Charts and Diagrams → 29 |  |
| 39 | REST API documentation | 2013-09-26 A → 2013-09-26 | 2013-09-26 A → 2013-09-26 |  | 100% → 0% | none → 1d | Middleware and Routes definitions → 38 |  |
| 41 | **Account and Repositories Manager** |  |  |  |  |  | 21 → 24 |  |
| 42 | DB Queries Documentation |  | 2013-09-18 A → 2013-09-17 A (-1d) | 3d → 2d |  |  | 21 → 29 |  |
| 43 | Repositories Management |  |  |  |  |  |  | was named Gathering Information Documentation |
| 45 | **Implementation** |  |  |  | 6% → 7% | 0d → 1d |  |  |
| 53 | **Back End** |  | 2013-10-22 → 2013-10-18 (-4d) | 17d → 15d | 9% → 10% | 1d → 3d |  |  |
| 58 | **Accounts and Repositories Manager** |  | 2013-10-24 → 2013-10-23 (-1d) | 20d → 19d |  | 1d → 3d |  |  |
| 59 | Accounts and Repositories Controllers |  |  |  |  | 4d → 5d |  | was named Accounts to Data Base Controllers |
| 61 | Communication with Back End Server | 2013-10-23 → 2013-10-22 (-1d) | 2013-10-24 → 2013-10-23 (-1d) |  |  | 1d → 3d | 54, 55, 56, 57, Account and Repositories Controller → 54, 55, 56, 57 |  |
| 63 | **Unit Testing** | 2013-10-23 → 2013-10-21 (-2d) | 2013-10-29 → 2013-10-28 (-1d) | 6d → 7d |  | 3d → 5d |  |  |
| 65 | Back End Testing | 2013-10-23 → 2013-10-21 (-2d) | 2013-10-24 → 2013-10-22 (-2d) |  |  | 3d → 5d |  |  |
| 66 | Account and Repositories Testing | 2013-10-28 → 2013-10-26 (-2d) | 2013-10-29 → 2013-10-28 (-1d) |  |  | 2d → 3d |  |  |

## Version 4 (saved 2013-09-28)

Note of the change: Changed some tech plan and progress, and fixed conflict in progress.

Last finish stays 2013-12-09. Complete tasks 30 → 31.

Changed:

| ID | Task | Start | Finish | Complete | Total float | Other |
| --- | --- | --- | --- | --- | --- | --- |
| 1 | **Panda Code Reviews** |  |  | 36% → 38% |  |  |
| 23 | **System Design** |  |  | 64% → 76% |  |  |
| 24 | **Software Design** | 2013-09-11 A |  | 0% → 38% | -7d → 0d |  |
| 25 | Use Case Diagrams | 2013-09-11 A | 2013-09-11 A | 0% → 100% | -5d → none |  |
| 26 | Use Case Descriptions | 2013-09-12 A |  | 0% → 80% |  |  |
| 28 | Flow Charts | 2013-09-20 A |  | 0% → 10% | -7d → -5d |  |
| 29 | Class Diagrams | 2013-09-24 A |  | 0% → 10% |  |  |
| 75 | Final Deployment in Amazon Web Servers EC2 |  |  |  |  | was named Deployment in Amazon Web Servers EC2 |

## Version 5 (saved 2013-09-28)

Note of the change: lots of changes to gantt

Last finish stays 2013-12-09. Complete tasks 31 → 30.

Removed: 35 Source Code Annotator

Changed:

| ID | Task | Start | Finish | Duration | Complete | Total float | Predecessors | Other |
| --- | --- | --- | --- | --- | --- | --- | --- | --- |
| 23 | **System Design** |  |  |  | 76% → 75% |  |  |  |
| 24 | **Software Design** |  | 2013-09-25 → 2013-09-20 (-5d) | 11d → 8d |  |  |  |  |
| 27 | Sequential Diagram | 2013-09-18 → 2013-09-16 (-2d) | 2013-09-18 → 2013-09-16 (-2d) |  |  | -2d → 0.2d |  |  |
| 28 | Flow Charts | 2013-09-20 A → 2013-09-17 A (-3d) | 2013-09-23 → 2013-09-18 (-5d) |  |  | -5d → 0.2d |  |  |
| 29 | Class Diagrams | 2013-09-24 A → 2013-09-19 A (-5d) | 2013-09-25 → 2013-09-20 (-5d) |  |  | -7d → 0d |  |  |
| 30 | **Front End Mockups** | 2013-09-16 A → 2013-09-23 A (+7d) |  | 10d → 5d |  |  | 24 → 29, 24 |  |
| 31 | Account Manager | 2013-09-16 A → 2013-09-23 A (+7d) | 2013-09-16 A → 2013-09-23 A (+7d) |  |  |  |  |  |
| 32 | Repository Manager | 2013-09-19 A → 2013-09-24 A (+5d) | 2013-09-19 A → 2013-09-24 A (+5d) |  |  |  |  |  |
| 33 | Testing Manager | 2013-09-23 A → 2013-09-25 A (+2d) | 2013-09-23 A → 2013-09-25 A (+2d) |  |  |  |  |  |
| 34 | Source Code Viewer and Annotator | 2013-09-25 A → 2013-09-26 A (+1d) | 2013-09-25 A → 2013-09-26 A (+1d) |  |  |  |  | was named Source Code Viewer |
| 35 | Grading |  |  |  |  |  | Source Code Annotator → none |  |
| 36 | **Back End** | 2013-09-17 A → 2013-09-23 A (+6d) |  | 9d → 5d |  |  | 24 → 29, 24 |  |
| 37 | Sandboxed Prototype | 2013-09-17 A → 2013-09-23 A (+6d) | 2013-09-17 A → 2013-09-23 A (+6d) |  |  |  |  |  |
| 38 | REST API documentation | 2013-09-26 → 2013-09-24 (-2d) | 2013-09-26 → 2013-09-24 (-2d) |  |  | 1d → 3d |  |  |
| 40 | **Account and Repositories Manager** | 2013-09-16 A → 2013-09-19 A (+3d) |  | 9d → 6d |  |  | 24 → 29, 24 |  |
| 41 | DB Queries Documentation | 2013-09-16 A → 2013-09-23 A (+7d) | 2013-09-17 A → 2013-09-24 A (+7d) |  |  |  |  |  |
| 74 | Final Deployment |  |  |  |  |  |  | was named Final Deployment in Amazon Web Servers EC2 |

## Version 6 (saved 2013-09-28)

Note of the change: more changes to gantt

Last finish stays 2013-12-09. Complete tasks 30 → 27.

Changed:

| ID | Task | Start | Finish | Duration | Complete | Total float | Predecessors | Other |
| --- | --- | --- | --- | --- | --- | --- | --- | --- |
| 1 | **Panda Code Reviews** |  |  |  | 38% → 31% |  |  |  |
| 23 | **System Design** |  | 2013-09-27 → 2013-10-04 (+7d) | 13d → 17.6d | 75% → 38% | 0d → -3.6d |  |  |
| 24 | **Software Design** |  | 2013-09-20 → 2013-09-24 (+4d) | 8d → 9.6d | 38% → 30% |  |  |  |
| 26 | Use Case Descriptions |  | 2013-09-13 → 2013-09-17 (+4d) | 2d → 4d | 80% → 40% | 0.2d → -1.8d |  | resources Nelián Colón [50%]; Daniel Santiago [50%]; Samuel Rodríguez [50%] → Nelián Colón [50%]; Daniel Santiago [10%]; Samuel Rodríguez [20%] |
| 27 | Sequential Diagram | 2013-09-16 → 2013-09-18 (+2d) | 2013-09-16 → 2013-09-18 (+2d) |  |  | 0.2d → -1.8d |  |  |
| 28 | Flow Charts |  | 2013-09-18 → 2013-09-20 (+2d) |  |  | 0.2d → 0d |  |  |
| 29 | Class Diagrams |  | 2013-09-20 → 2013-09-24 (+4d) |  |  | 0d → -3.6d |  |  |
| 30 | **Front End Mockups** |  |  |  |  |  | 29, 24 → 29 |  |
| 36 | **Back End** |  |  |  |  |  | 29, 24 → 29 |  |
| 38 | REST API documentation |  | 2013-09-24 → 2013-09-25 (+1d) |  |  | 3d → 2.4d |  |  |
| 40 | **Account and Repositories Manager** | 2013-09-19 A → 2013-09-24 (+5d) | 2013-09-26 A → 2013-10-04 (+8d) | 6d → 8d | 100% → 0% | none → -3.6d | 29, 24 → 29 |  |
| 41 | DB Queries Documentation | 2013-09-23 A → 2013-09-24 (+1d) | 2013-09-24 A → 2013-09-26 (+2d) |  | 100% → 0% | none → -3.6d |  |  |
| 42 | Repositories Management | 2013-09-19 A → 2013-09-26 (+7d) | 2013-09-23 A → 2013-10-01 (+8d) |  | 100% → 0% | none → -3.6d |  |  |
| 43 | Payment System (Ads) | 2013-09-24 A → 2013-10-01 (+7d) | 2013-09-26 A → 2013-10-04 (+8d) |  | 100% → 0% | none → -3.6d |  |  |
| 44 | **Implementation** | 2013-09-27 A → 2013-09-30 A (+3d) | 2013-10-25 → 2013-10-28 (+3d) | 21d → 21.6d |  | 1d → -0.6d |  |  |
| 57 | **Accounts and Repositories Manager** | 2013-09-27 → 2013-10-04 (+7d) | 2013-10-23 → 2013-10-28 (+5d) | 19d → 17d |  | 3d → -0.6d |  |  |
| 58 | Accounts and Repositories Controllers | 2013-09-27 → 2013-10-04 (+7d) | 2013-10-03 → 2013-10-11 (+8d) |  |  | 5d → -0.6d |  |  |
| 59 | Repository Manager | 2013-10-04 → 2013-10-11 (+7d) | 2013-10-10 → 2013-10-18 (+8d) |  |  | 5d → -0.6d |  |  |
| 61 | Payment System (Ads) | 2013-10-11 → 2013-10-18 (+7d) | 2013-10-21 → 2013-10-28 (+7d) |  |  | 5d → -0.6d |  |  |
| 62 | **Unit Testing** |  | 2013-10-28 → 2013-11-01 (+4d) | 7d → 10.6d |  | 5d → 2.4d |  |  |
| 65 | Account and Repositories Testing | 2013-10-26 → 2013-10-30 (+4d) | 2013-10-28 → 2013-11-01 (+4d) |  |  | 3d → -0.6d |  |  |
| 66 | Payment System Testing | 2013-10-25 → 2013-10-31 (+6d) | 2013-10-25 → 2013-11-01 (+7d) |  |  | 8d → 2.4d |  |  |
| 67 | **System Integration** |  | 2013-11-13 → 2013-11-14 (+1d) | 12d → 12.6d |  | 0d → -0.6d |  |  |
| 69 | Integration of Back End with Account and Repositories Manager |  | 2013-11-05 → 2013-11-06 (+1d) |  |  | 0d → -0.6d |  |  |
| 70 | Integration of Ads System |  | 2013-11-06 → 2013-11-07 (+1d) |  |  | 0d → -0.6d |  |  |
| 71 | Full Integration |  | 2013-11-11 → 2013-11-12 (+1d) |  |  | 0d → -0.6d |  |  |
| 72 | Integration Testing |  | 2013-11-13 → 2013-11-14 (+1d) |  |  | 0d → -0.6d |  |  |

## Version 7 (saved 2013-09-28)

Note of the change: mas cambios al gantt d mier

Last finish stays 2013-12-09.

Changed:

| ID | Task | Start | Finish | Duration | Complete | Total float | Other |
| --- | --- | --- | --- | --- | --- | --- | --- |
| 1 | **Panda Code Reviews** |  |  |  | 31% → 32% |  |  |
| 23 | **System Design** |  | 2013-10-04 → 2013-09-27 (-7d) | 17.6d → 13d | 38% → 48% | -3.6d → 1d |  |
| 24 | **Software Design** |  | 2013-09-24 → 2013-09-23 (-1d) | 9.6d → 9d | 30% → 33% |  |  |
| 26 | Use Case Descriptions |  | 2013-09-17 → 2013-09-16 (-1d) | 4d → 3d | 40% → 53% | -1.8d → 0d |  |
| 27 | Sequential Diagram | 2013-09-18 → 2013-09-17 (-1d) | 2013-09-18 → 2013-09-17 (-1d) |  |  | -1.8d → 0d |  |
| 28 | Flow Charts |  | 2013-09-20 → 2013-09-19 (-1d) |  |  | 0d → 0.4d | resources Daniel Santiago [50%]; Samuel Rodríguez [50%] → Daniel Santiago [40%]; Samuel Rodríguez [40%] |
| 29 | Class Diagrams | 2013-09-19 A → 2013-09-20 A (+1d) | 2013-09-24 → 2013-09-23 (-1d) |  |  | -3.6d → 0d |  |
| 36 | **Back End** | 2013-09-23 A → 2013-09-24 A (+1d) |  | 5d → 4d |  |  |  |
| 37 | Sandboxed Prototype | 2013-09-23 A → 2013-09-24 A (+1d) | 2013-09-23 A → 2013-09-24 A (+1d) |  |  |  |  |
| 38 | REST API documentation | 2013-09-24 → 2013-09-25 (+1d) |  |  |  | 2.4d → 2d |  |
| 40 | **Account and Repositories Manager** |  | 2013-10-04 → 2013-09-27 (-7d) | 8d → 4d |  | -3.6d → 1d |  |
| 41 | DB Queries Documentation |  | 2013-09-26 → 2013-09-24 (-2d) | 2d → 1d |  | -3.6d → 1d |  |
| 42 | Repositories Management | 2013-09-26 → 2013-09-25 (-1d) | 2013-10-01 → 2013-09-26 (-5d) | 3d → 2d |  | -3.6d → 1d |  |
| 43 | Payment System (Ads) | 2013-10-01 → 2013-09-27 (-4d) | 2013-10-04 → 2013-09-27 (-7d) | 3d → 1d |  | -3.6d → 1d |  |
| 44 | **Implementation** |  | 2013-10-28 → 2013-10-25 (-3d) | 21.6d → 20d |  | -0.6d → 1d |  |
| 57 | **Accounts and Repositories Manager** | 2013-10-04 → 2013-09-30 (-4d) | 2013-10-28 → 2013-10-24 (-4d) | 17d → 19d |  | -0.6d → 2d |  |
| 58 | Accounts and Repositories Controllers | 2013-10-04 → 2013-09-30 (-4d) | 2013-10-11 → 2013-10-04 (-7d) |  |  | -0.6d → 2d |  |
| 59 | Repository Manager | 2013-10-11 → 2013-10-07 (-4d) | 2013-10-18 → 2013-10-11 (-7d) |  |  | -0.6d → 2d |  |
| 61 | Payment System (Ads) | 2013-10-18 → 2013-10-14 (-4d) | 2013-10-28 → 2013-10-24 (-4d) |  |  | -0.6d → 2d |  |
| 62 | **Unit Testing** |  | 2013-11-01 → 2013-10-29 (-3d) | 10.6d → 8d |  | 2.4d → 5d |  |
| 65 | Account and Repositories Testing | 2013-10-30 → 2013-10-28 (-2d) | 2013-11-01 → 2013-10-29 (-3d) |  |  | -0.6d → 2d |  |
| 66 | Payment System Testing | 2013-10-31 → 2013-10-26 (-5d) | 2013-11-01 → 2013-10-26 (-6d) |  |  | 2.4d → 7d |  |
| 67 | **System Integration** |  | 2013-11-14 → 2013-11-13 (-1d) | 12.6d → 12d |  | -0.6d → 0d |  |
| 69 | Integration of Back End with Account and Repositories Manager |  | 2013-11-06 → 2013-11-05 (-1d) |  |  | -0.6d → 0d |  |
| 70 | Integration of Ads System |  | 2013-11-07 → 2013-11-06 (-1d) |  |  | -0.6d → 0d |  |
| 71 | Full Integration |  | 2013-11-12 → 2013-11-11 (-1d) |  |  | -0.6d → 0d |  |
| 72 | Integration Testing |  | 2013-11-14 → 2013-11-13 (-1d) |  |  | -0.6d → 0d |  |

## Version 8 (saved 2013-09-30)

Note of the change: gantt final?

Last finish stays 2013-12-09. Complete tasks 27 → 30.

Added:

| ID | Task | Duration | Start | Finish | Predecessors | Resources |
| --- | --- | --- | --- | --- | --- | --- |
| 52 | Email Exchange System | 4d | 2013-10-15 | 2013-10-18 | 51 | Nelián Colón [50%] |

Removed: 33 Testing Manager; 34 Source Code Viewer and Annotator; 35 Grading; 41 DB Queries Documentation; 43 Payment System (Ads); 49 Source Code Viewer; 50 Source Code Annotation; 51 Grading; 66 Payment System Testing

Changed:

| ID | Task | Start | Finish | Duration | Complete | Total float | Predecessors | Other |
| --- | --- | --- | --- | --- | --- | --- | --- | --- |
| 1 | **Panda Code Reviews** |  |  |  | 32% → 36% |  |  |  |
| 8 | **Proposal Development** |  |  |  |  |  | none → 2 |  |
| 22 | Proposal Presentation |  | 2013-09-10 A → 2013-09-09 A (-1d) | 2d → 1d |  |  |  |  |
| 23 | **System Design** |  | 2013-09-27 → 2013-09-30 A (+3d) | 13d → 14d | 48% → 100% | 1d → none |  |  |
| 24 | **Software Design** |  | 2013-09-23 → 2013-09-30 A (+7d) | 9d → 14d | 33% → 100% | 0d → none |  |  |
| 25 | Use Case Diagrams |  | 2013-09-11 A → 2013-09-12 A (+1d) | 1d → 2d |  |  |  | resources Nelián Colón [50%] → Nelián Colón [15%] |
| 26 | Use Case Descriptions | 2013-09-12 A → 2013-09-13 A (+1d) | 2013-09-16 A | 3d → 2d | 53% → 100% | 0d → none |  | resources Nelián Colón [50%]; Daniel Santiago [10%]; Samuel Rodríguez [20%] → Nelián Colón [15%] |
| 27 | Sequential Diagrams | 2013-09-17 A | 2013-09-17 → 2013-09-18 A (+1d) | 1d → 2d | 0% → 100% | 0d → none |  | was named Sequential Diagram; resources Nelián Colón [50%] → Nelián Colón [15%] |
| 28 | Class Diagrams | 2013-09-20 A → 2013-09-17 A (-3d) | 2013-09-23 → 2013-09-17 A (-6d) | 2d → 1d | 10% → 100% | 0d → none | 29 → 27 |  |
| 29 | Flow Charts | 2013-09-17 A → 2013-09-20 A (+3d) | 2013-09-19 → 2013-09-20 A (+1d) | 2d → 1d | 10% → 100% | 0.4d → none | 27 → 28 |  |
| 30 | **Front End** |  | 2013-09-27 A → 2013-09-30 A (+3d) | 5d → 6d |  |  | 28 → 28, 25, 26, 27, 29 | was named Front End Mockups |
| 31 | Student Views |  | 2013-09-23 A → 2013-09-25 A (+2d) | 1d → 3d |  |  | 28 → 28, 25, 26, 27, 29 | was named Account Manager |
| 32 | Professor Views | 2013-09-24 A → 2013-09-26 A (+2d) | 2013-09-24 A → 2013-09-30 A (+6d) | 1d → 3d |  |  |  | was named Repository Manager |
| 33 | **Back End** |  | 2013-09-27 A |  | 67% → 100% | 0d → none | 28 → 28, 25, 26, 27, 29 |  |
| 34 | Sandboxed Prototype |  |  |  |  |  | 28 → 28, 25, 26, 27, 29 |  |
| 35 | REST API documentation | 2013-09-25 A | 2013-09-25 A |  | 0% → 100% | 2d → none |  |  |
| 36 | Queries Structure |  |  |  |  |  |  | was named Queries and Data Base Structure |
| 37 | **Account and Repositories Manager** | 2013-09-24 A | 2013-09-27 → 2013-09-25 A (-2d) | 4d → 2d | 0% → 100% | 1d → none | 28 → 28, 25, 26, 27, 29 |  |
| 38 | Repositories Management | 2013-09-25 → 2013-09-24 A (-1d) | 2013-09-26 → 2013-09-25 A (-1d) |  | 0% → 100% | 1d → none | DB Queries Documentation → 28, 25, 26, 27, 29 |  |
| 39 | **Implementation** | 2013-09-30 A → 2013-10-01 (+1d) | 2013-10-25 → 2013-10-26 (+1d) |  | 7% → 0% | 1d → 0d | none → 23 |  |
| 40 | **Front End** | 2013-09-30 A → 2013-10-01 (+1d) | 2013-10-25 → 2013-10-26 (+1d) |  | 10% → 0% |  |  |  |
| 41 | Student Views | 2013-09-30 A → 2013-10-01 (+1d) | 2013-10-03 → 2013-10-14 (+11d) | 4d → 10d | 10% → 0% | 0.4d → 0d |  | was named Account Manager |
| 42 | Professor Views | 2013-10-04 A → 2013-10-15 (+11d) | 2013-10-09 → 2013-10-21 (+12d) | 4d → 5d | 10% → 0% | 0.4d → 0d |  | was named Repository Manager |
| 43 | Administrator Views | 2013-10-10 A → 2013-10-22 (+12d) | 2013-10-15 → 2013-10-26 (+11d) | 4d → 5d | 10% → 0% | 0.3d → 0d |  | was named Testing Manager |
| 44 | **Back End** | 2013-09-30 A → 2013-10-01 (+1d) | 2013-10-18 → 2013-10-21 (+3d) |  | 10% → 0% | 3d → 0d |  |  |
| 45 | Data Base | 2013-09-30 A → 2013-10-01 (+1d) | 2013-10-03 → 2013-10-04 (+1d) |  | 10% → 0% | 0.4d → -1d |  |  |
| 46 | Back End Server | 2013-10-04 A → 2013-10-07 (+3d) | 2013-10-09 → 2013-10-10 (+1d) |  | 10% → 0% | 0.4d → -1d |  |  |
| 47 | Testing Framework | 2013-10-10 A → 2013-10-11 (+1d) | 2013-10-15 → 2013-10-16 (+1d) |  | 10% → 0% | 0.3d → -1d |  |  |
| 48 | REST API | 2013-10-16 A → 2013-10-17 (+1d) | 2013-10-18 → 2013-10-21 (+3d) |  | 10% → 0% | 3d → -1d |  |  |
| 49 | **Accounts and Repositories Manager** | 2013-09-30 → 2013-10-01 (+1d) | 2013-10-24 → 2013-10-26 (+2d) | 19d → 20d |  | 2d → 0d |  |  |
| 50 | Accounts and Repositories Controllers | 2013-09-30 → 2013-10-01 (+1d) | 2013-10-04 → 2013-10-07 (+3d) |  |  |  |  |  |
| 51 | Repository Manager | 2013-10-07 → 2013-10-08 (+1d) | 2013-10-11 → 2013-10-14 (+3d) |  |  |  |  |  |
| 53 | Ads | 2013-10-14 → 2013-10-21 (+7d) | 2013-10-24 → 2013-10-23 (-1d) | 5d → 3d |  |  | 51 → 52 | was named Payment System (Ads) |
| 54 | Communication with Back End Server | 2013-10-22 → 2013-10-24 (+2d) | 2013-10-23 → 2013-10-26 (+3d) | 2d → 3d |  | 3d → -1d |  |  |
| 55 | **Unit Testing** | 2013-10-21 → 2013-10-22 (+1d) |  | 8d → 7d |  | 5d → 0d | none → 44 |  |
| 56 | Front End Testing | 2013-10-26 → 2013-10-28 (+2d) | 2013-10-28 → 2013-10-29 (+1d) |  |  |  |  |  |
| 57 | Back End Testing | 2013-10-21 → 2013-10-22 (+1d) | 2013-10-22 → 2013-10-24 (+2d) | 2d → 3d |  | 5d → 3d |  |  |
| 58 | Account and Repositories Testing |  |  |  |  | 2d → -1d |  | constraint none → start no earlier than 2013-10-26 |
| 59 | **System Integration** | 2013-10-29 → 2013-10-30 (+1d) |  | 12d → 11d |  |  | none → 55 |  |
| 60 | Integration of Front End with Back End | 2013-10-29 → 2013-10-30 (+1d) | 2013-10-31 → 2013-11-01 (+1d) |  |  |  |  |  |
| 61 | Integration of Back End with Account and Repositories Manager | 2013-11-01 → 2013-11-04 (+3d) |  | 3d → 2d |  |  |  |  |
| 62 | Integration of Ads System |  |  |  |  |  | 57, Payment System Testing, 61 → 57, 61 |  |
| 65 | **Delivery** |  |  |  |  |  | none → 59 |  |
