# GanttChart

How a schedule from MS Project changed from version to version. A marks actual dates.

## Version 1 (saved 2013-08-29, file GanttChart.mpp)

Note of the change: changed logo and name, added gantt chart

| ID | WBS | Task | Duration | Start | Finish | Predecessors | Total float | Constraint |
| --- | --- | --- | --- | --- | --- | --- | --- | --- |
| 1 | 1 | **Panda Code Review** | 89d | 2013-08-07 | 2013-12-09 |  | 0d |  |
| 2 | 1.1 | **System Specification** | 5d | 2013-08-07 | 2013-08-13 |  | 8d |  |
| 3 |  | Definition of Needs | 1d | 2013-08-07 | 2013-08-07 |  | 8d |  |
| 4 |  | Concept Development | 1d | 2013-08-08 | 2013-08-08 | 3 | 8d |  |
| 5 |  | Analysis of Alternatives | 1d | 2013-08-09 | 2013-08-09 | 4 | 8d |  |
| 6 |  | System requirements Assessment | 1d | 2013-08-12 | 2013-08-12 | 5 | 8d |  |
| 7 |  | Specs Document Elaboration | 1d | 2013-08-13 | 2013-08-13 | 6 | 8d |  |
| 8 | 1.2 | **Proposal Development** | 5d | 2013-08-13 | 2013-08-20 |  | 8d |  |
| 9 |  | Objectives | 0d | 2013-08-13 | 2013-08-13 | 7 | 8d |  |
| 10 |  | Problem Statement | 1d | 2013-08-14 | 2013-08-14 | 9 | 11d |  |
| 11 |  | Project Antecedents | 1d | 2013-08-14 | 2013-08-14 | 9 | 8d |  |
| 12 |  | General Approach | 1d | 2013-08-15 | 2013-08-15 | 11 | 8d |  |
| 13 |  | Personnel Workload Distribution | 1d | 2013-08-16 | 2013-08-16 | 12 | 8d |  |
| 14 |  | Budget | 1d | 2013-08-15 | 2013-08-15 | 10 | 11d |  |
| 15 |  | Assessment Methods | 1d | 2013-08-20 | 2013-08-20 | 13 | 8d |  |
| 16 |  | Impact | 1d | 2013-08-14 | 2013-08-14 | 9 | 12d |  |
| 17 |  | Market Overview | 1d | 2013-08-15 | 2013-08-15 | 11 | 9d |  |
| 18 |  | Risk Management | 1d | 2013-08-16 | 2013-08-16 | 17 | 9d |  |
| 19 |  | First Draft Review | 1d | 2013-08-19 | 2013-08-19 | 18 | 9d |  |
| 20 |  | Final Proposal Review and Acceptance | 3d | 2013-09-04 | 2013-09-06 | 19 |  |  |
| 21 |  | Proposal Presentation | 2d | 2013-09-07 | 2013-09-09 | 20 |  |  |
| 22 | 1.5 | **System Design** | 13d | 2013-09-10 | 2013-09-26 | 8 | 0d |  |
| 23 | 1.5.1 | **Front End Mockups** | 13d | 2013-09-10 | 2013-09-26 | 21 | 0d |  |
| 24 |  | Account Manager | 2d | 2013-09-10 | 2013-09-11 | 21 | 0d |  |
| 25 |  | Repository Manager | 2d | 2013-09-13 | 2013-09-16 | 24 | 0d |  |
| 26 |  | Testing Manager | 2d | 2013-09-17 | 2013-09-18 | 25 | 0d |  |
| 27 |  | Source Code Viewer | 2d | 2013-09-19 | 2013-09-20 | 26 | 0d |  |
| 28 |  | Source Code Annotator | 2d | 2013-09-23 | 2013-09-24 | 27 | 0d |  |
| 29 |  | Grading | 2d | 2013-09-25 | 2013-09-26 | 28 | 0d |  |
| 30 | 1.5.2 | **Back End** | 8d | 2013-09-10 | 2013-09-19 | 21 | 0d |  |
| 31 |  | Flow Charts and Diagrams | 1d | 2013-09-10 | 2013-09-10 | 21 | 0d |  |
| 32 |  | Sandboxed Prototype | 1d | 2013-09-11 | 2013-09-11 | 31 | 0d |  |
| 33 |  | Middleware and Routes definitions | 1d | 2013-09-17 | 2013-09-17 | 32 | 0d |  |
| 34 |  | REST API documentation | 1d | 2013-09-18 | 2013-09-18 | 33 | 0d |  |
| 35 |  | Queries and Data Base Structure | 1d | 2013-09-19 | 2013-09-19 | 34 | 0d |  |
| 36 | 1.5.3 | **Account and Repositories Manager** | 2d | 2013-09-10 | 2013-09-11 | 21 | 10d |  |
| 37 |  | DB Queries Documentation | 1d | 2013-09-10 | 2013-09-10 | 21 | 10d |  |
| 38 |  | Gathering Information Documentation | 1d | 2013-09-11 | 2013-09-11 | 37 | 10d |  |
| 39 | 1.6 | **Implementation** | 31d | 2013-09-12 | 2013-10-24 |  | 1d |  |
| 40 | 1.6.1 | **Front End** | 20d | 2013-09-27 | 2013-10-24 | 23 | 0d |  |
| 41 |  | Account Manager | 4d | 2013-09-27 | 2013-10-02 | 23 | 0d |  |
| 42 |  | Repository Manager | 4d | 2013-10-03 | 2013-10-08 | 41 | 0d |  |
| 43 |  | Testing Manager | 4d | 2013-10-09 | 2013-10-14 | 42 | 0d |  |
| 44 |  | Source Code Viewer | 3d | 2013-10-15 | 2013-10-17 | 43 | 0d |  |
| 45 |  | Source Code Annotation | 3d | 2013-10-18 | 2013-10-22 | 44 | 0d |  |
| 46 |  | Grading | 2d | 2013-10-23 | 2013-10-24 | 45 | 0d |  |
| 47 | 1.6.2 | **Back End** | 25d | 2013-09-20 | 2013-10-24 | 30 | 0d |  |
| 48 |  | Testing Framework | 5d | 2013-09-20 | 2013-09-26 | 30 | 0d |  |
| 49 |  | Back End Server | 5d | 2013-09-27 | 2013-10-03 | 48 | 0d |  |
| 50 |  | REST API | 5d | 2013-10-04 | 2013-10-10 | 49 | 0d |  |
| 51 |  | Account and Repositories Controller | 5d | 2013-10-11 | 2013-10-17 | 50 | 0d |  |
| 52 |  | Data Base | 5d | 2013-10-18 | 2013-10-24 | 51 | 0d |  |
| 53 | 1.6.3 | **Accounts and Repositories Manager** | 15d | 2013-09-12 | 2013-10-02 | 36 | 10d |  |
| 54 |  | Accounts to Data Base Controllers | 5d | 2013-09-12 | 2013-09-18 | 36 | 10d |  |
| 55 |  | Repository Manager | 5d | 2013-09-19 | 2013-09-25 | 54 | 10d |  |
| 56 |  | Communication with Back End Server | 5d | 2013-09-26 | 2013-10-02 | 55 | 10d |  |
| 57 |  | Payment System | 5d | 2013-10-03 | 2013-10-11 | 56 | 10d |  |
| 58 | 1.7 | **Unit Testing** | 16d | 2013-10-07 | 2013-10-28 |  | 6d |  |
| 59 |  | Front End Testing | 2d | 2013-10-25 | 2013-10-28 | 40 | 0d |  |
| 60 |  | Back End Testing | 2d | 2013-10-25 | 2013-10-28 | 47 | 0d |  |
| 61 |  | Account and Repositories Testing | 2d | 2013-10-07 | 2013-10-08 | 53 | 17d |  |
| 62 |  | Payment System Testing | 1d | 2013-10-14 | 2013-10-14 | 57 | 16d |  |
| 63 | 1.8 | **System Integration** | 14d | 2013-10-29 | 2013-11-15 |  | 0d |  |
| 64 |  | Integration of Front End with Back End | 3d | 2013-10-29 | 2013-10-31 | 59, 60 | 0d |  |
| 65 |  | Integration of Back End with Account and Repositories Manager | 3d | 2013-11-01 | 2013-11-05 | 60, 61, 64 | 0d |  |
| 66 |  | Integration of Payment System | 2d | 2013-11-06 | 2013-11-07 | 60, 62, 65 | 0d |  |
| 67 |  | Full Integration | 3d | 2013-11-08 | 2013-11-12 | 64, 65, 66 | 0d |  |
| 68 |  | Integration Testing | 3d | 2013-11-13 | 2013-11-15 | 67 | 0d |  |
| 69 | 1.9 | **Delivery** | 6d | 2013-12-02 | 2013-12-09 |  | 0d |  |
| 70 |  | System Demo | 1d | 2013-12-02 | 2013-12-02 | 68 | 0d | start no earlier than 2013-12-02 |

| ID | Task | Duration | Start | Finish | Predecessors | Total float | Constraint |
| --- | --- | --- | --- | --- | --- | --- | --- |
| 71 | Final Report | 5d | 2013-12-03 | 2013-12-09 | 70 | 0d | finish no earlier than 2013-12-09 |

## Version 2 (saved 2013-08-29, file GanttChart.mpp)

Note of the change: added task to gantt chart

Last finish stays 2013-12-09.

Added:

| ID | Task | Duration | Start | Finish | Predecessors | Resources |
| --- | --- | --- | --- | --- | --- | --- |
| 70 | Deployment in Amazon Web Servers EC2 | 1d | 2013-11-18 | 2013-11-18 | 68 | Daniel Santiago; Nelián Colón; Samuel Rodríguez |

Changed:

| ID | Task | Start | Duration | Predecessors |
| --- | --- | --- | --- | --- |
| 69 | **Delivery** | 2013-12-02 → 2013-11-18 (-14d) | 6d → 16d |  |
| 71 | System Demo |  |  | 68 → 70 |

## Version 3 (saved 2013-08-29, file GanttChart.mpp)

Note of the change: Merge branch 'master' of github.com:nelii28o2/Capstone

Last finish stays 2013-12-09. Complete tasks 0 → 16.

Changed:

| ID | Task | Start | Finish | Complete | Total float |
| --- | --- | --- | --- | --- | --- |
| 1 | **Panda Code Review** | 2013-08-07 A |  | 0% → 11% |  |
| 2 | **System Specification** | 2013-08-07 A | 2013-08-13 A | 0% → 100% | 8d → none |
| 3 | Definition of Needs | 2013-08-07 A | 2013-08-07 A | 0% → 100% | 8d → none |
| 4 | Concept Development | 2013-08-08 A | 2013-08-08 A | 0% → 100% | 8d → none |
| 5 | Analysis of Alternatives | 2013-08-09 A | 2013-08-09 A | 0% → 100% | 8d → none |
| 6 | System requirements Assessment | 2013-08-12 A | 2013-08-12 A | 0% → 100% | 8d → none |
| 7 | Specs Document Elaboration | 2013-08-13 A | 2013-08-13 A | 0% → 100% | 8d → none |
| 8 | **Proposal Development** | 2013-08-13 A | 2013-08-20 A | 0% → 100% | 8d → none |
| 9 | Objectives | 2013-08-13 A | 2013-08-13 A | 0% → 100% | 8d → none |
| 10 | Problem Statement | 2013-08-14 A | 2013-08-14 A | 0% → 100% | 11d → none |
| 11 | Project Antecedents | 2013-08-14 A | 2013-08-14 A | 0% → 100% | 8d → none |
| 12 | General Approach | 2013-08-15 A | 2013-08-15 A | 0% → 100% | 8d → none |
| 13 | Personnel Workload Distribution | 2013-08-16 A | 2013-08-16 A | 0% → 100% | 8d → none |
| 14 | Budget | 2013-08-15 A | 2013-08-15 A | 0% → 100% | 11d → none |
| 15 | Assessment Methods | 2013-08-20 A | 2013-08-20 A | 0% → 100% | 8d → none |
| 16 | Impact | 2013-08-14 A | 2013-08-14 A | 0% → 100% | 12d → none |
| 17 | Market Overview | 2013-08-15 A | 2013-08-15 A | 0% → 100% | 9d → none |
| 18 | Risk Management | 2013-08-16 A | 2013-08-16 A | 0% → 100% | 9d → none |
| 19 | First Draft Review | 2013-08-19 A | 2013-08-19 A | 0% → 100% | 9d → none |

## Version 4 (saved 2013-08-29, file GanttChart.mpp)

Note of the change: gantt chart final?

Last finish stays 2013-12-09. Complete tasks 16 → 17.

Added:

| ID | Task | Duration | Start | Finish | Predecessors | Resources |
| --- | --- | --- | --- | --- | --- | --- |
| 19 | Executive Summary | 1d | 2013-08-21 A | 2013-08-21 A | 9, 10, 11, 12, 13, 14, 15, 16, 17, 18 | Samuel Rodríguez |

Changed:

| ID | Task | Start | Finish | Duration | Complete | Predecessors |
| --- | --- | --- | --- | --- | --- | --- |
| 1 | **Panda Code Review** |  |  |  | 11% → 12% |  |
| 8 | **Proposal Development** |  | 2013-08-20 A → 2013-08-30 A (+10d) | 5d → 13d |  |  |
| 20 | First Draft Review | 2013-08-19 A → 2013-08-30 A (+11d) | 2013-08-19 A → 2013-08-30 A (+11d) |  |  | 18 → 19 |
| 58 | Payment System |  |  |  |  | 57 → 54 |

## Version 5 (saved 2013-09-01, file GanttChart.mpp)

Note of the change: changed some dependencies in gantt

Last finish stays 2013-12-09.

Changed:

| ID | Task | Start | Finish | Duration | Total float | Predecessors |
| --- | --- | --- | --- | --- | --- | --- |
| 49 | Testing Framework | 2013-09-20 → 2013-10-04 (+14d) | 2013-09-26 → 2013-10-10 (+14d) |  | 0d → 1d | 31 → 50 |
| 50 | Back End Server |  |  |  | 0d → 1d | 49 → 53 |
| 51 | REST API | 2013-10-04 → 2013-10-11 (+7d) | 2013-10-10 → 2013-10-17 (+7d) |  | 0d → 1d | 50 → 49 |
| 52 | Account and Repositories Controller | 2013-10-11 → 2013-10-18 (+7d) | 2013-10-17 → 2013-10-24 (+7d) |  | 0d → 1d |  |
| 53 | Data Base | 2013-10-18 → 2013-09-20 (-28d) | 2013-10-24 → 2013-09-26 (-28d) |  | 0d → 1d | 52 → 31 |
| 64 | **System Integration** |  | 2013-11-15 → 2013-11-13 (-2d) | 14d → 12d | 0d → 2d |  |
| 67 | Integration of Payment System |  | 2013-11-07 → 2013-11-06 (-1d) | 2d → 1d | 0d → 2d |  |
| 68 | Full Integration | 2013-11-08 → 2013-11-07 (-1d) | 2013-11-12 → 2013-11-11 (-1d) |  | 0d → 2d |  |
| 69 | Integration Testing | 2013-11-13 → 2013-11-12 (-1d) | 2013-11-15 → 2013-11-13 (-2d) | 3d → 2d | 0d → 2d |  |
| 70 | **Delivery** | 2013-11-18 → 2013-11-14 (-4d) |  | 16d → 18d |  |  |
| 71 | Deployment in Amazon Web Servers EC2 | 2013-11-18 → 2013-11-14 (-4d) | 2013-11-18 → 2013-11-14 (-4d) |  | 9d → 11d |  |

## Version 6 (saved 2013-09-01, file Team_Aguacate_draft_gantt.mpp)

Note of the change: fixed new names, fixed git ignore for pdf

Last finish stays 2013-12-09.

Changed:

| ID | Task | Start | Finish | Duration | Total float | Other |
| --- | --- | --- | --- | --- | --- | --- |
| 1 | **Panda Code Review** |  |  | 89d → 92d |  |  |
| 37 | **Account and Repositories Manager** |  | 2013-09-11 → 2013-09-17 (+6d) | 2d → 6d | 10d → 6d |  |
| 38 | DB Queries Documentation |  | 2013-09-10 → 2013-09-12 (+2d) | 1d → 3d | 10d → 6d |  |
| 39 | Gathering Information Documentation | 2013-09-11 → 2013-09-13 (+2d) | 2013-09-11 → 2013-09-17 (+6d) | 1d → 3d | 10d → 6d |  |
| 40 | **Implementation** | 2013-09-12 → 2013-09-18 (+6d) |  | 31d → 27d |  |  |
| 54 | **Accounts and Repositories Manager** | 2013-09-12 → 2013-09-18 (+6d) | 2013-10-02 → 2013-10-08 (+6d) |  | 10d → 6d |  |
| 55 | Accounts to Data Base Controllers | 2013-09-12 → 2013-09-18 (+6d) | 2013-09-18 → 2013-09-24 (+6d) |  | 10d → 6d |  |
| 56 | Repository Manager | 2013-09-19 → 2013-09-25 (+6d) | 2013-09-25 → 2013-10-01 (+6d) |  | 10d → 6d |  |
| 57 | Communication with Back End Server | 2013-09-26 → 2013-10-02 (+6d) | 2013-10-02 → 2013-10-08 (+6d) |  | 10d → 6d |  |
| 58 | Payment System | 2013-10-03 → 2013-10-09 (+6d) | 2013-10-11 → 2013-10-17 (+6d) |  | 10d → 6d |  |
| 59 | **Unit Testing** | 2013-10-07 → 2013-10-11 (+4d) |  | 16d → 13d |  |  |
| 60 | Front End Testing | 2013-10-25 → 2013-10-26 (+1d) |  |  |  | constraint none → finish no earlier than 2013-10-28 |
| 61 | Back End Testing | 2013-10-25 → 2013-10-26 (+1d) |  |  |  | constraint none → start no earlier than 2013-10-26 |
| 62 | Account and Repositories Testing | 2013-10-07 → 2013-10-11 (+4d) | 2013-10-08 → 2013-10-14 (+6d) |  | 19d → 15d |  |
| 63 | Payment System Testing | 2013-10-14 → 2013-10-18 (+4d) | 2013-10-14 → 2013-10-18 (+4d) |  | 18d → 15d |  |
| 70 | **Delivery** |  |  | 18d → 20d |  |  |
| 73 | Final Report | 2013-12-03 → 2013-12-05 (+2d) |  |  |  |  |

## Version 7 (saved 2013-09-08, file Team_Aguacate_draft_gantt.mpp)

Note of the change: changes to gantt

Last finish stays 2013-12-09. Complete tasks 17 → 18.

Changed:

| ID | Task | Start | Finish | Duration | Complete | Total float | Predecessors | Other |
| --- | --- | --- | --- | --- | --- | --- | --- | --- |
| 1 | **Panda Code Review** |  |  |  | 12% → 13% |  |  |  |
| 3 | Definition of Needs |  |  |  |  |  |  | resources Daniel Santiago; Nelián Colón; Samuel Rodríguez → Daniel Santiago [50%]; Nelián Colón [50%]; Samuel Rodríguez [50%] |
| 4 | Concept Development |  |  |  |  |  |  | resources Daniel Santiago; Nelián Colón; Samuel Rodríguez → Daniel Santiago [50%]; Nelián Colón [50%]; Samuel Rodríguez [50%] |
| 5 | Analysis of Alternatives |  |  |  |  |  |  | resources Daniel Santiago; Nelián Colón; Samuel Rodríguez → Daniel Santiago [50%]; Nelián Colón [50%]; Samuel Rodríguez [50%] |
| 6 | System requirements Assessment |  |  |  |  |  |  | resources Daniel Santiago; Nelián Colón; Samuel Rodríguez → Daniel Santiago [50%]; Nelián Colón [50%]; Samuel Rodríguez [50%] |
| 7 | Specs Document Elaboration |  |  |  |  |  |  | resources Daniel Santiago; Nelián Colón; Samuel Rodríguez → Daniel Santiago [50%]; Nelián Colón [50%]; Samuel Rodríguez [50%] |
| 9 | Objectives |  |  |  |  |  |  | resources Samuel Rodríguez → Samuel Rodríguez [50%] |
| 10 | Problem Statement |  |  |  |  |  |  | resources Samuel Rodríguez → Samuel Rodríguez [50%] |
| 11 | Project Antecedents |  |  |  |  |  |  | resources Nelián Colón → Nelián Colón [50%] |
| 12 | General Approach |  |  |  |  |  |  | resources Nelián Colón → Nelián Colón [50%] |
| 13 | Personnel Workload Distribution |  |  |  |  |  |  | resources Nelián Colón → Nelián Colón [50%] |
| 14 | Budget |  |  |  |  |  |  | resources Samuel Rodríguez → Samuel Rodríguez [50%] |
| 15 | Assessment Methods |  |  |  |  |  |  | resources Nelián Colón → Nelián Colón [50%] |
| 16 | Impact |  |  |  |  |  |  | resources Daniel Santiago → Daniel Santiago [50%] |
| 17 | Market Overview |  |  |  |  |  |  | resources Daniel Santiago → Daniel Santiago [50%] |
| 18 | Risk Management |  |  |  |  |  |  | resources Daniel Santiago → Daniel Santiago [50%] |
| 19 | Executive Summary |  |  |  |  |  |  | resources Samuel Rodríguez → Samuel Rodríguez [50%] |
| 20 | First Draft Review |  |  |  |  |  |  | resources Daniel Santiago; Nelián Colón; Samuel Rodríguez → Daniel Santiago [50%]; Nelián Colón [50%]; Samuel Rodríguez [50%] |
| 21 | Final Proposal Review and Acceptance | 2013-09-04 → 2013-09-02 (-2d) | 2013-09-06 → 2013-09-13 (+7d) | 3d → 10d |  | none → 0d |  | constraint none → finish no earlier than 2013-09-13; resources Daniel Santiago; Nelián Colón; Samuel Rodríguez → Daniel Santiago [50%]; Nelián Colón [50%]; Samuel Rodríguez [50%] |
| 22 | Proposal Presentation | 2013-09-07 → 2013-09-09 A (+2d) | 2013-09-09 → 2013-09-10 A (+1d) |  | 0% → 100% |  |  | resources Daniel Santiago; Nelián Colón; Samuel Rodríguez → Daniel Santiago [50%]; Nelián Colón [50%]; Samuel Rodríguez [50%] |
| 23 | **System Design** | 2013-09-10 → 2013-09-11 (+1d) | 2013-09-26 → 2013-09-27 (+1d) |  |  | 1d → 0d |  |  |
| 24 | **Front End Mockups** | 2013-09-10 → 2013-09-16 (+6d) | 2013-09-26 → 2013-09-27 (+1d) | 13d → 10d |  | 1d → 0d | 22 → 21 |  |
| 25 | Account Manager | 2013-09-10 → 2013-09-16 (+6d) | 2013-09-11 → 2013-09-17 (+6d) |  |  | 2d → 0d | 22 → 21 | resources Samuel Rodríguez → Samuel Rodríguez [50%] |
| 26 | Repository Manager | 2013-09-13 → 2013-09-19 (+6d) | 2013-09-16 → 2013-09-20 (+4d) |  |  | 1d → 0d |  | resources Samuel Rodríguez → Samuel Rodríguez [50%] |
| 27 | Testing Manager | 2013-09-17 → 2013-09-23 (+6d) | 2013-09-18 → 2013-09-24 (+6d) |  |  | 1d → 0d |  | resources Samuel Rodríguez → Samuel Rodríguez [50%] |
| 28 | Source Code Viewer | 2013-09-19 → 2013-09-25 (+6d) | 2013-09-20 → 2013-09-25 (+5d) | 2d → 1d |  | 1d → 0d |  | resources Samuel Rodríguez → Samuel Rodríguez [50%] |
| 29 | Source Code Annotator | 2013-09-23 → 2013-09-26 (+3d) | 2013-09-24 → 2013-09-26 (+2d) | 2d → 1d |  | 1d → 0d |  | resources Samuel Rodríguez → Samuel Rodríguez [50%] |
| 30 | Grading | 2013-09-25 → 2013-09-27 (+2d) | 2013-09-26 → 2013-09-27 (+1d) | 2d → 1d |  | 1d → 0d |  | resources Samuel Rodríguez → Samuel Rodríguez [50%] |
| 31 | **Back End** | 2013-09-10 → 2013-09-11 (+1d) | 2013-09-19 → 2013-09-25 (+6d) | 8d → 11d |  | 1d → 0d |  |  |
| 32 | Flow Charts and Diagrams | 2013-09-10 → 2013-09-11 (+1d) | 2013-09-10 → 2013-09-11 (+1d) |  |  | 1d → 0d |  | resources Daniel Santiago → Daniel Santiago [50%] |
| 33 | Sandboxed Prototype | 2013-09-11 → 2013-09-12 (+1d) | 2013-09-11 → 2013-09-13 (+2d) | 1d → 2d |  | 1d → 0d |  | resources Daniel Santiago → Daniel Santiago [50%] |
| 34 | Middleware and Routes definitions | 2013-09-17 → 2013-09-23 (+6d) | 2013-09-17 → 2013-09-23 (+6d) |  |  | 1d → 0d |  | resources Daniel Santiago → Daniel Santiago [50%] |
| 35 | REST API documentation | 2013-09-18 → 2013-09-24 (+6d) | 2013-09-18 → 2013-09-24 (+6d) |  |  | 1d → 0d |  | resources Daniel Santiago → Daniel Santiago [50%] |
| 36 | Queries and Data Base Structure | 2013-09-19 → 2013-09-25 (+6d) | 2013-09-19 → 2013-09-25 (+6d) |  |  | 1d → 0d |  | resources Daniel Santiago → Daniel Santiago [50%] |
| 37 | **Account and Repositories Manager** | 2013-09-10 → 2013-09-11 (+1d) | 2013-09-17 → 2013-09-18 (+1d) |  |  | 6d → 7d |  |  |
| 38 | DB Queries Documentation | 2013-09-10 → 2013-09-11 (+1d) | 2013-09-12 → 2013-09-13 (+1d) |  |  | 6d → 7d |  | resources Nelián Colón → Nelián Colón [50%] |
| 39 | Gathering Information Documentation | 2013-09-13 → 2013-09-16 (+3d) | 2013-09-17 → 2013-09-18 (+1d) |  |  | 6d → 7d |  | resources Nelián Colón → Nelián Colón [50%] |
| 40 | **Implementation** | 2013-09-18 → 2013-09-19 (+1d) | 2013-10-24 → 2013-10-25 (+1d) |  |  | 1d → 0d |  |  |
| 41 | **Front End** | 2013-09-27 → 2013-09-30 (+3d) | 2013-10-24 → 2013-10-25 (+1d) |  |  | 1d → 0d |  |  |
| 42 | Account Manager | 2013-09-27 → 2013-09-30 (+3d) | 2013-10-02 → 2013-10-03 (+1d) |  |  | 1d → 0d |  | resources Samuel Rodríguez → Samuel Rodríguez [50%] |
| 43 | Repository Manager | 2013-10-03 → 2013-10-04 (+1d) | 2013-10-08 → 2013-10-09 (+1d) |  |  | 1d → 0d |  | resources Samuel Rodríguez → Samuel Rodríguez [50%] |
| 44 | Testing Manager | 2013-10-09 → 2013-10-10 (+1d) | 2013-10-14 → 2013-10-15 (+1d) |  |  | 1d → 0d |  | resources Samuel Rodríguez → Samuel Rodríguez [50%] |
| 45 | Source Code Viewer | 2013-10-15 → 2013-10-16 (+1d) | 2013-10-17 → 2013-10-18 (+1d) |  |  | 1d → 0d |  | resources Samuel Rodríguez → Samuel Rodríguez [50%] |
| 46 | Source Code Annotation | 2013-10-18 → 2013-10-21 (+3d) | 2013-10-22 → 2013-10-23 (+1d) |  |  | 1d → 0d |  | resources Samuel Rodríguez → Samuel Rodríguez [50%] |
| 47 | Grading | 2013-10-23 → 2013-10-24 (+1d) | 2013-10-24 → 2013-10-25 (+1d) |  |  | 1d → 0d |  | resources Samuel Rodríguez → Samuel Rodríguez [50%] |
| 48 | **Back End** | 2013-09-20 → 2013-09-26 (+6d) | 2013-10-24 → 2013-10-18 (-6d) | 25d → 17d |  | 1d → 0d |  |  |
| 49 | Data Base | 2013-09-20 → 2013-09-26 (+6d) | 2013-09-26 → 2013-10-01 (+5d) | 5d → 4d |  | 1d → 0d |  | resources Daniel Santiago → Daniel Santiago [50%] |
| 50 | Back End Server | 2013-09-27 → 2013-10-02 (+5d) | 2013-10-03 → 2013-10-07 (+4d) | 5d → 4d |  | 1d → 0d |  | resources Daniel Santiago → Daniel Santiago [50%] |
| 51 | Testing Framework | 2013-10-04 → 2013-10-08 (+4d) | 2013-10-10 → 2013-10-11 (+1d) | 5d → 4d |  | 1d → 0d |  | resources Daniel Santiago → Daniel Santiago [50%] |
| 52 | REST API | 2013-10-11 → 2013-10-14 (+3d) | 2013-10-17 → 2013-10-16 (-1d) | 5d → 3d |  | 1d → 0d |  | resources Daniel Santiago → Daniel Santiago [50%] |
| 53 | Account and Repositories Controller | 2013-10-18 → 2013-10-17 (-1d) | 2013-10-24 → 2013-10-18 (-6d) | 5d → 2d |  | 1d → 0d |  | resources Daniel Santiago → Daniel Santiago [50%] |
| 54 | **Accounts and Repositories Manager** | 2013-09-18 → 2013-09-19 (+1d) | 2013-10-08 → 2013-10-25 (+17d) | 15d → 27d |  | 6d → 0d |  |  |
| 55 | Accounts to Data Base Controllers | 2013-09-18 → 2013-09-19 (+1d) | 2013-09-24 → 2013-09-25 (+1d) |  |  | 6d → 7d |  | resources Nelián Colón → Nelián Colón [50%] |
| 56 | Repository Manager | 2013-09-25 → 2013-09-26 (+1d) | 2013-10-01 → 2013-10-02 (+1d) |  |  | 6d → 7d |  | resources Nelián Colón → Nelián Colón [50%] |
| 57 | Communication with Back End Server | 2013-10-02 → 2013-10-21 (+19d) | 2013-10-08 → 2013-10-25 (+17d) |  |  | 6d → 0d | 56 → 49, 50, 51, 52, 53 | resources Nelián Colón → Nelián Colón [50%] |
| 58 | Payment System | 2013-10-09 → 2013-10-03 (-6d) | 2013-10-17 → 2013-10-16 (-1d) |  |  | 6d → 7d | 54 → 56 | resources Nelián Colón → Nelián Colón [50%] |
| 59 | **Unit Testing** | 2013-10-11 → 2013-10-17 (+6d) | 2013-10-28 → 2013-10-29 (+1d) | 13d → 10d |  | 8d → 5d |  |  |
| 60 | Front End Testing |  |  |  |  | 2d → 0d |  | resources Samuel Rodríguez → Samuel Rodríguez [50%] |
| 61 | Back End Testing |  |  |  |  | 2d → 0d |  | resources Daniel Santiago → Daniel Santiago [50%] |
| 62 | Account and Repositories Testing | 2013-10-11 → 2013-10-28 (+17d) | 2013-10-14 → 2013-10-29 (+15d) |  |  | 15d → 2d |  | resources Nelián Colón → Nelián Colón [50%] |
| 63 | Payment System Testing | 2013-10-18 → 2013-10-17 (-1d) | 2013-10-18 → 2013-10-17 (-1d) |  |  | 15d → 14d |  | resources Nelián Colón → Nelián Colón [50%] |
| 64 | **System Integration** |  | 2013-11-13 → 2013-11-15 (+2d) | 12d → 14d |  | 2d → 0d |  |  |
| 65 | Integration of Front End with Back End |  |  |  |  | 2d → 0d |  | resources Daniel Santiago; Samuel Rodríguez → Daniel Santiago [50%]; Samuel Rodríguez [50%] |
| 66 | Integration of Back End with Account and Repositories Manager |  |  |  |  | 2d → 0d |  | resources Daniel Santiago; Nelián Colón → Daniel Santiago [50%]; Nelián Colón [50%] |
| 67 | Integration of Payment System |  |  |  |  | 2d → 0d |  | resources Nelián Colón → Nelián Colón [50%] |
| 68 | Full Integration |  | 2013-11-11 → 2013-11-12 (+1d) | 3d → 4d |  | 2d → 0d |  | resources Daniel Santiago; Nelián Colón; Samuel Rodríguez → Daniel Santiago [50%]; Nelián Colón [50%]; Samuel Rodríguez [50%] |
| 69 | Integration Testing | 2013-11-12 → 2013-11-13 (+1d) | 2013-11-13 → 2013-11-15 (+2d) | 2d → 3d |  | 2d → 0d |  | resources Daniel Santiago; Nelián Colón; Samuel Rodríguez → Daniel Santiago [50%]; Nelián Colón [50%]; Samuel Rodríguez [50%] |
| 70 | **Delivery** | 2013-11-14 → 2013-11-18 (+4d) |  | 20d → 18d |  |  |  |  |
| 71 | Deployment in Amazon Web Servers EC2 | 2013-11-14 → 2013-11-18 (+4d) | 2013-11-14 → 2013-11-19 (+5d) | 1d → 2d |  | 13d → 9d |  | resources Daniel Santiago; Nelián Colón; Samuel Rodríguez → Daniel Santiago [50%]; Nelián Colón [50%]; Samuel Rodríguez [50%] |
| 72 | System Demo |  | 2013-12-02 → 2013-12-03 (+1d) | 1d → 2d |  | 2d → 1d |  | resources Daniel Santiago; Nelián Colón; Samuel Rodríguez → Daniel Santiago [50%]; Nelián Colón [50%]; Samuel Rodríguez [50%] |

| ID | Task | Other |
| --- | --- | --- |
| 73 | Final Report | resources Daniel Santiago; Nelián Colón; Samuel Rodríguez → Daniel Santiago [50%]; Nelián Colón [50%]; Samuel Rodríguez [50%] |

## Version 8 (saved 2013-09-08, file Team_Aguacate_draft_gantt.mpp)

Note of the change: more changes to gantt

Last finish stays 2013-12-09.

Changed:

| ID | Task | Start | Finish | Duration | Complete | Total float | Predecessors | Other |
| --- | --- | --- | --- | --- | --- | --- | --- | --- |
| 1 | **Panda Code Review** |  |  |  | 13% → 14% |  |  |  |
| 23 | **System Design** | 2013-09-11 → 2013-09-16 (+5d) |  | 13d → 10d |  |  |  |  |
| 31 | **Back End** | 2013-09-11 → 2013-09-16 (+5d) | 2013-09-25 → 2013-09-27 (+2d) | 11d → 10d |  |  | 22 → 21 |  |
| 32 | Flow Charts and Diagrams | 2013-09-11 → 2013-09-16 (+5d) | 2013-09-11 → 2013-09-16 (+5d) |  |  |  | 22 → 21 |  |
| 33 | Sandboxed Prototype | 2013-09-12 → 2013-09-17 (+5d) | 2013-09-13 → 2013-09-18 (+5d) |  |  |  |  |  |
| 34 | Middleware and Routes definitions | 2013-09-23 → 2013-09-24 (+1d) | 2013-09-23 → 2013-09-25 (+2d) | 1d → 2d |  |  |  |  |
| 35 | REST API documentation | 2013-09-24 → 2013-09-26 (+2d) | 2013-09-24 → 2013-09-26 (+2d) |  |  |  |  |  |
| 36 | Queries and Data Base Structure | 2013-09-25 → 2013-09-27 (+2d) | 2013-09-25 → 2013-09-27 (+2d) |  |  |  |  |  |
| 37 | **Account and Repositories Manager** | 2013-09-11 → 2013-09-16 (+5d) | 2013-09-18 → 2013-09-23 (+5d) |  |  | 7d → 4d | 22 → 21 |  |
| 38 | DB Queries Documentation | 2013-09-11 → 2013-09-16 (+5d) | 2013-09-13 → 2013-09-18 (+5d) |  |  | 7d → 4d | 22 → 21 |  |
| 39 | Gathering Information Documentation | 2013-09-16 → 2013-09-19 (+3d) | 2013-09-18 → 2013-09-23 (+5d) |  |  | 7d → 4d |  |  |
| 40 | **Implementation** | 2013-09-19 → 2013-09-24 (+5d) |  | 27d → 24d |  |  |  |  |
| 48 | **Back End** | 2013-09-26 → 2013-09-30 (+4d) | 2013-10-18 → 2013-10-22 (+4d) |  |  | 0d → 1d |  |  |
| 49 | Data Base | 2013-09-26 → 2013-09-30 (+4d) | 2013-10-01 → 2013-10-03 (+2d) |  |  | 0d → 1d |  |  |
| 50 | Back End Server | 2013-10-02 → 2013-10-04 (+2d) | 2013-10-07 → 2013-10-09 (+2d) |  |  | 0d → 1d |  |  |
| 51 | Testing Framework | 2013-10-08 → 2013-10-10 (+2d) | 2013-10-11 → 2013-10-15 (+4d) |  |  | 0d → 1d |  |  |
| 52 | REST API | 2013-10-14 → 2013-10-16 (+2d) | 2013-10-16 → 2013-10-18 (+2d) |  |  | 0d → 1d |  |  |
| 53 | Account and Repositories Controller | 2013-10-17 → 2013-10-21 (+4d) | 2013-10-18 → 2013-10-22 (+4d) |  |  | 0d → 1d |  |  |
| 54 | **Accounts and Repositories Manager** | 2013-09-19 → 2013-09-24 (+5d) | 2013-10-25 → 2013-10-24 (-1d) | 27d → 23d |  | 0d → 1d |  |  |
| 55 | Accounts to Data Base Controllers | 2013-09-19 → 2013-09-24 (+5d) | 2013-09-25 → 2013-09-30 (+5d) |  |  | 7d → 4d |  |  |
| 56 | Repository Manager | 2013-09-26 → 2013-10-01 (+5d) | 2013-10-02 → 2013-10-07 (+5d) |  |  | 7d → 4d |  |  |
| 57 | Communication with Back End Server | 2013-10-21 → 2013-10-23 (+2d) | 2013-10-25 → 2013-10-24 (-1d) | 5d → 2d |  | 0d → 1d |  |  |
| 58 | Payment System | 2013-10-03 → 2013-10-08 (+5d) | 2013-10-16 → 2013-10-21 (+5d) |  |  | 7d → 4d |  |  |
| 59 | **Unit Testing** | 2013-10-17 → 2013-10-23 (+6d) |  | 10d → 6d |  | 5d → 3d |  |  |
| 60 | Front End Testing |  |  |  |  |  |  | constraint finish no earlier than 2013-10-28 → none |
| 61 | Back End Testing | 2013-10-26 → 2013-10-23 (-3d) | 2013-10-28 → 2013-10-24 (-4d) |  |  | 0d → 3d |  | constraint start no earlier than 2013-10-26 → none |
| 63 | Payment System Testing | 2013-10-17 → 2013-10-25 (+8d) | 2013-10-17 → 2013-10-25 (+8d) |  |  | 14d → 8d |  |  |
| 72 | System Demo |  | 2013-12-03 → 2013-12-02 (-1d) | 2d → 1d |  | 1d → 2d |  | constraint start no earlier than 2013-12-02 → finish no earlier than 2013-12-02 |

## Version 9 (saved 2013-09-08, file Team_Aguacate_draft_gantt.mpp)

Note of the change: mas cambios al gantt

Last finish stays 2013-12-09.

Added:

| ID | Task | Duration | Start | Finish | Predecessors | Resources |
| --- | --- | --- | --- | --- | --- | --- |
| 40 | Payment System | 3d | 2013-09-24 | 2013-09-26 | 39 | Nelián Colón [50%] |

Changed:

| ID | Task | Start | Finish | Duration | Complete | Total float | Other |
| --- | --- | --- | --- | --- | --- | --- | --- |
| 1 | **Panda Code Review** |  |  |  | 14% → 13% |  |  |
| 37 | **Account and Repositories Manager** |  | 2013-09-23 → 2013-09-26 (+3d) | 6d → 9d |  | 4d → 1d |  |
| 41 | **Implementation** | 2013-09-24 → 2013-09-27 (+3d) |  | 24d → 21d |  |  |  |
| 55 | **Accounts and Repositories Manager** | 2013-09-24 → 2013-09-27 (+3d) |  | 23d → 20d |  |  |  |
| 56 | Accounts to Data Base Controllers | 2013-09-24 → 2013-09-27 (+3d) | 2013-09-30 → 2013-10-03 (+3d) |  |  |  |  |
| 57 | Repository Manager | 2013-10-01 → 2013-10-04 (+3d) | 2013-10-07 → 2013-10-10 (+3d) |  |  |  |  |
| 59 | Payment System | 2013-10-08 → 2013-10-11 (+3d) |  |  |  |  |  |
| 65 | **System Integration** |  | 2013-11-15 → 2013-11-13 (-2d) | 14d → 12d |  |  |  |
| 69 | Full Integration |  | 2013-11-12 → 2013-11-11 (-1d) | 4d → 3d |  |  |  |
| 70 | Integration Testing | 2013-11-13 → 2013-11-12 (-1d) | 2013-11-15 → 2013-11-13 (-2d) | 3d → 2d |  |  |  |
| 71 | **Delivery** | 2013-11-18 → 2013-11-14 (-4d) |  | 18d → 20d |  |  |  |
| 72 | Deployment in Amazon Web Servers EC2 | 2013-11-18 → 2013-11-14 (-4d) | 2013-11-19 → 2013-11-15 (-4d) |  |  | 10d → 0d | constraint none → finish no later than 2013-11-15 |

## Version 10 (saved 2013-09-12, file Team_Aguacate_draft_gantt.mpp)

Note of the change: some changes to gantt

Last finish stays 2013-12-09.

Changed:

| ID | Task | Other |
| --- | --- | --- |
| 1 | **Panda Code Reviews** | was named Panda Code Review |
| 40 | Payment System (Ads) | was named Payment System |
| 59 | Payment System (Ads) | was named Payment System |
| 68 | Integration of Ads System | was named Integration of Payment System |
